How a schedule from an exported table changed from version to version. A marks actual dates.

## Version 1 (saved 2026-10-08)

Note of the change: feat: add initial SYNAPTIX subdocuments and project components structure

| Task | Start | Finish |
| --- | --- | --- |
| Acta de arranque, interlocutores y decisiones | 2026-12-01 | 2026-12-03 |
| Línea base de alcance y trazabilidad | 2026-12-16 | 2026-12-21 |
| Definición de terminado y recepción | 2027-01-18 | 2027-01-21 |
| Registro de riesgos y respuestas presupuestadas | 2027-01-19 | 2027-01-21 |
| Línea base integrada de plazo, costo y recursos | 2027-03-16 | 2027-03-18 |
| Plan inicial de reversibilidad | 2027-02-01 | 2027-02-03 |
| Modelo operativo y contrato de cobertura preparados | 2028-05-04 | 2028-05-08 |
| Catálogo, runbooks y traspaso al servicio | 2028-07-03 | 2028-07-05 |
| Expediente de custodia independiente de fuentes | 2027-05-03 | 2027-05-04 |
| Actualización semestral de custodia de fuentes | 2031-05-02 | 2031-05-05 |
| Plan de reversibilidad actualizado durante implementación | 2028-02-01 | 2028-02-02 |
| Expediente quincenal de control | 2028-07-17 | 2028-07-18 |
| Protocolo integral y datos de prueba E1 | 2027-08-23 | 2027-08-26 |
| Puerta de QA, cobertura y contratos E1 | 2027-08-23 | 2027-08-25 |
| Regresión de sistema y convivencia E1 | 2027-08-30 | 2027-09-02 |
| Carga y estrés con mezcla operacional E1 | 2027-08-24 | 2027-08-26 |
| Continuidad local y terminales desconectados E1 | 2027-08-26 | 2027-09-01 |
| Resiliencia de componentes y recuperación E1 | 2027-09-01 | 2027-09-08 |
| Conmutación real de desastre y retorno E1 | 2027-09-08 | 2027-09-13 |
| Prueba ofensiva y cierre de hallazgos E1 | 2027-08-24 | 2027-08-30 |
| Verificación de accesibilidad WCAG 2.2 AA E1 | 2027-08-23 | 2027-08-25 |
| Aceptación de usuario y expediente T-17 E1 | 2027-10-04 | 2027-10-07 |
| Materiales y ejercicios perfil 1 E1 | 2027-10-18 | 2027-10-21 |
| Materiales y ejercicios perfil 2 E1 | 2027-10-19 | 2027-10-22 |
| Materiales y ejercicios perfil 3 E1 | 2027-10-21 | 2027-10-26 |
| Materiales y ejercicios perfil 4 E1 | 2027-10-20 | 2027-10-25 |
| Materiales y ejercicios perfil 5 E1 | 2027-10-18 | 2027-10-21 |
| Plan de formación y turnos E1 | 2027-10-26 | 2027-10-28 |
| Expediente de evaluación y certificación E1 | 2028-02-01 | 2028-02-04 |
| Expediente de cierre de marcha blanca E1 | 2028-02-14 | 2028-02-17 |
| Protocolo integral y datos de prueba E2 | 2028-03-16 | 2028-03-21 |
| Puerta de QA, cobertura y contratos E2 | 2028-03-16 | 2028-03-20 |
| Regresión de sistema y convivencia E2 | 2028-03-22 | 2028-03-27 |
| Carga y estrés con mezcla operacional E2 | 2028-03-16 | 2028-03-20 |
| Continuidad local y terminales desconectados E2 | 2028-03-20 | 2028-03-24 |
| Resiliencia de componentes y recuperación E2 | 2028-03-24 | 2028-03-31 |
| Conmutación real de desastre y retorno E2 | 2028-03-31 | 2028-04-05 |
| Prueba ofensiva y cierre de hallazgos E2 | 2028-03-16 | 2028-03-22 |
| Verificación de accesibilidad WCAG 2.2 AA E2 | 2028-03-16 | 2028-03-20 |
| Aceptación de usuario y expediente T-17 E2 | 2028-04-05 | 2028-04-11 |
| Materiales y ejercicios perfil 1 E2 | 2028-04-17 | 2028-04-20 |
| Materiales y ejercicios perfil 2 E2 | 2028-04-17 | 2028-04-20 |
| Materiales y ejercicios perfil 3 E2 | 2028-04-19 | 2028-04-24 |
| Materiales y ejercicios perfil 4 E2 | 2028-04-17 | 2028-04-20 |
| Materiales y ejercicios perfil 5 E2 | 2028-04-19 | 2028-04-24 |
| Plan de formación y turnos E2 | 2028-04-24 | 2028-04-26 |
| Expediente de evaluación y certificación E2 | 2028-06-01 | 2028-06-06 |
| Expediente parcial de recepción continua E2 y registro de observaciones | 2028-06-15 | 2028-06-21 |
| Control mensual de servicio y SLA | 2031-07-21 | 2031-07-23 |
| Comprobación de respaldos y restauración | 2031-07-17 | 2031-07-21 |
| Revisión de seguridad y acceso | 2031-07-18 | 2031-07-21 |
| Mantenimiento, deuda y liberación controlada | 2031-07-18 | 2031-07-22 |
| Proyección de capacidad e infraestructura | 2031-07-17 | 2031-07-18 |
| Resiliencia de componentes y recuperación: control semestral | 2030-08-02 | 2030-08-08 |
| Conmutación real de desastre y retorno: control semestral | 2030-08-06 | 2030-08-09 |
| Prueba ofensiva y cierre de hallazgos: control anual | 2031-03-18 | 2031-03-25 |
| Jornada de actualización y transferencia | 2031-05-02 | 2031-05-07 |
| Plan de reversibilidad actualizado | 2030-11-05 | 2030-11-06 |
| Inventario de salida y responsables | 2031-04-01 | 2031-04-03 |
| Exportación abierta y manifiestos de datos | 2031-04-03 | 2031-04-08 |
| Fuentes, IaC, artefactos y documentación transferidos | 2031-05-06 | 2031-05-08 |
| Custodia, credenciales y recifrado autorizado | 2031-05-07 | 2031-05-12 |
| Aceptación de transferencia y eliminación autorizada | 2031-07-01 | 2031-07-04 |
| Acompañamiento quincenal de transición | 2031-07-22 | 2031-07-23 |
| Especificación y protocolo: Movimientos de salida y regreso identificados | 2027-01-25 | 2027-01-27 |
| Lógica, persistencia y contratos: Movimientos de salida y regreso identificados | 2027-07-19 | 2027-07-21 |
| Vistas de tarea y comprobación: Movimientos de salida y regreso identificados | 2027-07-27 | 2027-07-30 |
| Especificación y protocolo: Planes voluntarios y discrepancias operacionales | 2027-01-25 | 2027-01-27 |
| Lógica, persistencia y contratos: Planes voluntarios y discrepancias operacionales | 2027-07-19 | 2027-07-21 |
| Vistas de tarea y comprobación: Planes voluntarios y discrepancias operacionales | 2027-07-23 | 2027-07-28 |

| Task | Start | Finish |
| --- | --- | --- |
| Especificación y protocolo: Atención y escalamiento de planes vencidos | 2027-01-25 | 2027-01-27 |
| Lógica, persistencia y contratos: Atención y escalamiento de planes vencidos | 2027-07-19 | 2027-07-21 |
| Vistas de tarea y comprobación: Atención y escalamiento de planes vencidos | 2027-07-29 | 2027-08-03 |
| Especificación y protocolo: Autorización operacional de amarra y compatibilidad | 2027-01-25 | 2027-01-27 |
| Lógica, persistencia y contratos: Autorización operacional de amarra y compatibilidad | 2027-07-19 | 2027-07-21 |
| Vistas de tarea y comprobación: Autorización operacional de amarra y compatibilidad | 2027-07-29 | 2027-08-03 |
| Especificación y protocolo: Clases, nóminas y participación por intervalo | 2027-01-25 | 2027-01-27 |
| Lógica, persistencia y contratos: Clases, nóminas y participación por intervalo | 2027-07-19 | 2027-07-21 |
| Vistas de tarea y comprobación: Clases, nóminas y participación por intervalo | 2027-07-29 | 2027-08-03 |
| Especificación y protocolo: Retiros coordinados y entrega única de alumno | 2027-01-25 | 2027-01-27 |
| Lógica, persistencia y contratos: Retiros coordinados y entrega única de alumno | 2027-07-20 | 2027-07-22 |
| Vistas de tarea y comprobación: Retiros coordinados y entrega única de alumno | 2027-07-29 | 2027-08-03 |
| Especificación y protocolo: Retorno de participantes y vista mínima de salud | 2027-01-27 | 2027-01-29 |
| Lógica, persistencia y contratos: Retorno de participantes y vista mínima de salud | 2027-07-21 | 2027-07-23 |
| Vistas de tarea y comprobación: Retorno de participantes y vista mínima de salud | 2027-07-30 | 2027-08-04 |
| Especificación y protocolo: Inventario y condiciones de puestos y fondeos | 2027-01-25 | 2027-01-27 |
| Lógica, persistencia y contratos: Inventario y condiciones de puestos y fondeos | 2027-07-21 | 2027-07-23 |
| Vistas de tarea y comprobación: Inventario y condiciones de puestos y fondeos | 2027-08-02 | 2027-08-05 |
| Especificación y protocolo: Inspecciones de boyas y evidencia desconectada | 2027-01-25 | 2027-01-27 |
| Lógica, persistencia y contratos: Inspecciones de boyas y evidencia desconectada | 2027-07-21 | 2027-07-23 |
| Vistas de tarea y comprobación: Inspecciones de boyas y evidencia desconectada | 2027-08-02 | 2027-08-05 |
| Especificación y protocolo: Asociaciones temporales de medidores e instalaciones | 2027-01-27 | 2027-01-29 |
| Lógica, persistencia y contratos: Asociaciones temporales de medidores e instalaciones | 2027-07-21 | 2027-07-23 |
| Vistas de tarea y comprobación: Asociaciones temporales de medidores e instalaciones | 2027-07-29 | 2027-08-03 |
| Especificación y protocolo: Maestros de faena y habilitaciones de consulta inicial | 2027-01-27 | 2027-01-29 |
| Lógica, persistencia y contratos: Maestros de faena y habilitaciones de consulta inicial | 2027-07-21 | 2027-07-23 |
| Vistas de tarea y comprobación: Maestros de faena y habilitaciones de consulta inicial | 2027-08-03 | 2027-08-06 |
| Especificación y protocolo: Agenda de varadero y posiciones compatibles | 2027-12-01 | 2027-12-03 |
| Lógica, persistencia y contratos: Agenda de varadero y posiciones compatibles | 2028-01-17 | 2028-01-19 |
| Vistas de tarea y comprobación: Agenda de varadero y posiciones compatibles | 2028-02-03 | 2028-02-07 |
| Especificación y protocolo: Plan de izaje, validación y suspensión de faena | 2027-12-16 | 2027-12-20 |
| Lógica, persistencia y contratos: Plan de izaje, validación y suspensión de faena | 2028-01-21 | 2028-01-25 |
| Vistas de tarea y comprobación: Plan de izaje, validación y suspensión de faena | 2028-02-16 | 2028-02-18 |
| Especificación y protocolo: Órdenes, ejecución y reprogramación de trabajos | 2027-12-01 | 2027-12-03 |
| Lógica, persistencia y contratos: Órdenes, ejecución y reprogramación de trabajos | 2028-01-17 | 2028-01-19 |
| Vistas de tarea y comprobación: Órdenes, ejecución y reprogramación de trabajos | 2028-02-01 | 2028-02-03 |
| Especificación y protocolo: Acreditación, inducción y acceso a intervención | 2027-12-16 | 2027-12-20 |
| Lógica, persistencia y contratos: Acreditación, inducción y acceso a intervención | 2028-01-18 | 2028-01-20 |
| Vistas de tarea y comprobación: Acreditación, inducción y acceso a intervención | 2028-02-16 | 2028-02-18 |
| Especificación y protocolo: Despacho identificado y captura segura de combustible | 2027-01-25 | 2027-01-27 |
| Lógica, persistencia y contratos: Despacho identificado y captura segura de combustible | 2027-07-19 | 2027-07-21 |
| Vistas de tarea y comprobación: Despacho identificado y captura segura de combustible | 2027-07-28 | 2027-07-30 |
| Especificación y protocolo: Conciliación de tramos y rectificación de despachos | 2027-01-25 | 2027-01-27 |
| Lógica, persistencia y contratos: Conciliación de tramos y rectificación de despachos | 2027-07-19 | 2027-07-21 |
| Vistas de tarea y comprobación: Conciliación de tramos y rectificación de despachos | 2027-07-30 | 2027-08-03 |
| Especificación y protocolo: Intervalos y series conciliadas de agua y energía | 2027-01-27 | 2027-01-29 |
| Lógica, persistencia y contratos: Intervalos y series conciliadas de agua y energía | 2027-07-21 | 2027-07-23 |
| Vistas de tarea y comprobación: Intervalos y series conciliadas de agua y energía | 2027-07-30 | 2027-08-04 |
| Especificación y protocolo: Consultas de consumo y evidencia ambiental inicial | 2027-01-25 | 2027-01-27 |
| Lógica, persistencia y contratos: Consultas de consumo y evidencia ambiental inicial | 2027-07-19 | 2027-07-21 |
| Vistas de tarea y comprobación: Consultas de consumo y evidencia ambiental inicial | 2027-07-23 | 2027-07-28 |
| Especificación y protocolo: Recepción de residuos y discrepancias de origen | 2027-12-01 | 2027-12-03 |
| Lógica, persistencia y contratos: Recepción de residuos y discrepancias de origen | 2028-01-19 | 2028-01-24 |
| Vistas de tarea y comprobación: Recepción de residuos y discrepancias de origen | 2028-02-01 | 2028-02-03 |
| Especificación y protocolo: Entregas RESPEL parciales y certificados vinculados | 2027-12-16 | 2027-12-20 |
| Lógica, persistencia y contratos: Entregas RESPEL parciales y certificados vinculados | 2028-01-18 | 2028-01-20 |
| Vistas de tarea y comprobación: Entregas RESPEL parciales y certificados vinculados | 2028-02-16 | 2028-02-18 |
| Especificación y protocolo: Indicadores ambientales e imputación comercial de consumo | 2027-12-01 | 2027-12-03 |
| Lógica, persistencia y contratos: Indicadores ambientales e imputación comercial de consumo | 2028-01-17 | 2028-01-19 |
| Vistas de tarea y comprobación: Indicadores ambientales e imputación comercial de consumo | 2028-02-03 | 2028-02-07 |
| Especificación y protocolo: Maestros de personas, organizaciones y embarcaciones | 2027-01-25 | 2027-01-27 |
| Lógica, persistencia y contratos: Maestros de personas, organizaciones y embarcaciones | 2027-07-19 | 2027-07-21 |
| Vistas de tarea y comprobación: Maestros de personas, organizaciones y embarcaciones | 2027-07-30 | 2027-08-04 |
| Especificación y protocolo: Contratos y documentos vigentes de consulta E1 | 2027-01-25 | 2027-01-27 |
| Lógica, persistencia y contratos: Contratos y documentos vigentes de consulta E1 | 2027-07-21 | 2027-07-23 |
| Vistas de tarea y comprobación: Contratos y documentos vigentes de consulta E1 | 2027-07-30 | 2027-08-03 |
| Especificación y protocolo: Atención a visitas y asignación transitoria inicial | 2027-01-25 | 2027-01-27 |
| Lógica, persistencia y contratos: Atención a visitas y asignación transitoria inicial | 2027-07-19 | 2027-07-21 |
| Vistas de tarea y comprobación: Atención a visitas y asignación transitoria inicial | 2027-07-23 | 2027-07-28 |
| Especificación y protocolo: Espera y gestión contractual completa | 2027-12-16 | 2027-12-20 |

| Task | Start | Finish |
| --- | --- | --- |
| Lógica, persistencia y contratos: Espera y gestión contractual completa | 2028-01-18 | 2028-01-20 |
| Vistas de tarea y comprobación: Espera y gestión contractual completa | 2028-02-16 | 2028-02-18 |
| Especificación y protocolo: Hechos facturables, tarifas y lotes de envío | 2027-12-01 | 2027-12-03 |
| Lógica, persistencia y contratos: Hechos facturables, tarifas y lotes de envío | 2028-01-17 | 2028-01-19 |
| Vistas de tarea y comprobación: Hechos facturables, tarifas y lotes de envío | 2028-02-01 | 2028-02-03 |
| Especificación y protocolo: Respuesta contable, pagos y saldos informados | 2027-12-16 | 2027-12-20 |
| Lógica, persistencia y contratos: Respuesta contable, pagos y saldos informados | 2028-01-18 | 2028-01-20 |
| Vistas de tarea y comprobación: Respuesta contable, pagos y saldos informados | 2028-02-16 | 2028-02-18 |
| Especificación y protocolo: Cobranza y medidas con decisión competente | 2027-12-01 | 2027-12-03 |
| Lógica, persistencia y contratos: Cobranza y medidas con decisión competente | 2028-01-19 | 2028-01-24 |
| Vistas de tarea y comprobación: Cobranza y medidas con decisión competente | 2028-02-03 | 2028-02-08 |
| Especificación y protocolo: Expedientes de custodia y exportación íntegra | 2027-12-16 | 2027-12-20 |
| Lógica, persistencia y contratos: Expedientes de custodia y exportación íntegra | 2028-01-20 | 2028-01-25 |
| Vistas de tarea y comprobación: Expedientes de custodia y exportación íntegra | 2028-02-16 | 2028-02-18 |
| Repositorio e infraestructura como código gobernados | 2027-02-04 | 2027-02-05 |
| Red cloud primaria reproducible | 2027-03-01 | 2027-03-03 |
| Servicios de persistencia y objetos habilitados | 2027-03-08 | 2027-03-09 |
| Plataforma de contenedores y exposición habilitada | 2027-03-03 | 2027-03-05 |
| Cadena de promoción y artefactos protegidos | 2027-03-05 | 2027-03-10 |
| Ambiente DEV habilitado | 2027-03-10 | 2027-03-12 |
| Ambiente QA habilitado | 2027-03-11 | 2027-03-16 |
| Ambiente PREPROD habilitado | 2027-03-16 | 2027-03-19 |
| Ambiente PROD habilitado | 2027-03-15 | 2027-03-18 |
| Ambiente DR habilitado | 2027-03-18 | 2027-03-23 |
| Expediente de habilitación del recinto y recepción de activos | 2027-03-17 | 2027-03-19 |
| Configuración de nodos locales y almacenamiento redundante | 2027-03-19 | 2027-03-24 |
| Configuración de red local, segmentación y enlaces | 2027-03-25 | 2027-04-01 |
| Gestión y protección de terminales de referencia | 2027-04-01 | 2027-04-06 |
| Configuración de concentradores y broker de borde | 2027-04-01 | 2027-04-06 |
| Observabilidad técnica y alertas habilitadas | 2027-03-24 | 2027-03-30 |
| Procedimientos de respaldo y restauración técnica | 2027-03-23 | 2027-03-29 |
| Expediente técnico de entrega de cinco ambientes | 2027-04-14 | 2027-04-19 |
| Gestión de claves, secretos y certificados | 2027-03-01 | 2027-03-02 |
| Identidad central y federación configuradas | 2027-03-04 | 2027-03-09 |
| Matriz de permisos y separación de funciones | 2027-01-25 | 2027-01-27 |
| Autoridad local de acceso implementada | 2027-07-01 | 2027-07-06 |
| Revocación y actualización de habilitación local | 2027-07-19 | 2027-07-22 |
| Registro de auditoría protegido | 2027-07-05 | 2027-07-08 |
| Consentimiento y restricciones de finalidad implementados | 2027-08-04 | 2027-08-09 |
| Modelo de amenazas y plan de seguridad aprobables | 2027-01-27 | 2027-02-01 |
| Detección, cobertura y respuesta técnica configuradas | 2027-04-09 | 2027-04-15 |
| Expediente de privacidad y control de datos de prueba | 2027-03-17 | 2027-03-22 |
| Contratos de interfaces y eventos comunes | 2027-03-19 | 2027-03-23 |
| Infraestructura de mensajería y DLQ configurada | 2027-05-17 | 2027-05-20 |
| Biblioteca de outbox, idempotencia y correlación | 2027-07-01 | 2027-07-05 |
| Sincronizador de lotes y confirmaciones | 2027-07-21 | 2027-07-26 |
| Conciliación de autoridad y conflictos implementada | 2027-07-26 | 2027-07-29 |
| Ingesta y consolidación de telemetría implementadas | 2027-07-19 | 2027-07-21 |
| Base Android de operación en terreno | 2027-07-19 | 2027-07-21 |
| Cola móvil, evidencia y sincronización de canal | 2027-07-28 | 2027-08-02 |
| Base de portal y consola accesibles | 2027-07-02 | 2027-07-07 |
| Servicio común de notificaciones y preferencias | 2027-08-09 | 2027-08-12 |
| Adaptador con sistema laboral y fuente de identidad | 2027-07-22 | 2027-07-27 |
| Adaptador contable y conciliación técnica | 2028-01-20 | 2028-01-25 |
| Adaptador de pagos y webhooks protegidos | 2028-01-17 | 2028-01-20 |
| Flujo, estados y matriz de roles revisados | 2027-12-01 | 2027-12-03 |
| Especificación de las interfaces | 2027-12-16 | 2027-12-17 |
| Protocolo de medición y aceptación | 2028-01-05 | 2028-01-11 |
| Servicio de solicitudes y transiciones | 2028-01-06 | 2028-01-12 |
| Formularios y vistas en AUT | 2028-01-17 | 2028-01-19 |
| Historial y registro asistido auditable | 2028-02-01 | 2028-02-04 |
| Conexiones con CTR y VAR verificadas | 2028-02-03 | 2028-02-08 |
| Identidad y vínculo de armador integrados | 2028-02-17 | 2028-02-22 |
| Notificaciones y reintentos integrados | 2028-02-16 | 2028-02-18 |
| Informe de pruebas funcionales | 2028-03-01 | 2028-03-03 |
| Informe de seguridad y recuperación | 2028-03-21 | 2028-03-27 |
| Guía operativa y capacitación registrada | 2028-05-29 | 2028-05-31 |
| Registro base de la primera quincena | 2028-05-04 | 2028-05-08 |
| Registro base de la segunda quincena | 2028-05-16 | 2028-05-18 |
| Registro de piloto de la primera quincena | 2028-06-05 | 2028-06-07 |

| Task | Start | Finish |
| --- | --- | --- |
| Registro de piloto de la segunda quincena | 2028-06-19 | 2028-06-22 |
| Informe comparativo y acta de evaluación | 2028-06-29 | 2028-07-04 |
| Servicio desplegado y transferido a operación | 2028-08-04 | 2028-08-09 |
| Catálogo de mantenimiento y reglas de planificación definidos | 2027-12-01 | 2027-12-03 |
| Ficha, responsabilidades e interfaces especificadas | 2028-01-06 | 2028-01-11 |
| Ficha de ingreso de antecedentes disponible en AUT | 2028-01-11 | 2028-01-14 |
| Catálogo configurable y aceptación de propuestas implementados | 2028-02-04 | 2028-02-09 |
| Calendario integrado con posiciones, botaduras y habilitación | 2028-02-17 | 2028-02-22 |
| Trabajos aceptados vinculados a solicitudes IN1 | 2028-03-01 | 2028-03-06 |
| Permisos y notificaciones configurados | 2028-03-20 | 2028-03-22 |
| Evidencias de pruebas funcionales y de integración | 2028-03-23 | 2028-03-27 |
| Seguridad, recuperación y aceptación técnica | 2028-03-27 | 2028-04-03 |
| Participantes inscritos, fichas y capacitación registrada | 2029-05-04 | 2029-05-09 |
| Planes aceptados y calendario confirmado | 2029-05-17 | 2029-05-23 |
| Informe quincenal del piloto invernal | 2029-08-16 | 2029-08-20 |
| Registro quincenal de resultados de botaduras | 2029-11-20 | 2029-11-22 |
| Informe comparativo de resultados y acta de evaluación | 2029-12-03 | 2029-12-06 |
| Procedimiento, documentación y transferencia a operación | 2029-12-06 | 2029-12-11 |
| Inventario de formatos, volumen y campos requeridos | 2027-12-02 | 2027-12-07 |
| Interfaces y controles de IA especificados | 2028-01-03 | 2028-01-05 |
| Adaptador del extractor y procesamiento asíncrono | 2028-01-11 | 2028-01-14 |
| Reglas de campos, discrepancias y datos pendientes | 2028-01-20 | 2028-01-25 |
| Formulario de revisión y aprobación humana | 2028-02-01 | 2028-02-03 |
| Integración con expediente, NAV y auditoría | 2028-02-21 | 2028-02-24 |
| Ingreso manual, reintentos y resultados tardíos | 2028-02-18 | 2028-02-24 |
| Pruebas de extracción, integración y continuidad | 2028-03-03 | 2028-03-07 |
| Matriz y evidencias de controles de IA | 2028-03-17 | 2028-03-23 |
| Muestra autorizada, protocolo y capacitación | 2028-03-23 | 2028-03-28 |
| Registro quincenal de ejecución manual y asistida | 2028-06-19 | 2028-06-21 |
| Informe de tiempos, errores, costos y beneficio | 2028-06-29 | 2028-07-04 |
| Configuración, manuales y transferencia | 2028-08-08 | 2028-08-14 |
| Ficha de medición y atribución del resultado | 2027-01-29 | 2027-02-03 |
| Regla comercial y escenarios de incentivo | 2027-03-02 | 2027-03-05 |
| Interfaces y expediente de medición especificados | 2027-12-03 | 2027-12-07 |
| Captura de intervalos y validaciones implementadas | 2028-01-03 | 2028-01-05 |
| Cálculo versionado y expediente de conciliación | 2028-02-02 | 2028-02-07 |
| Evidencia de seguridad y cálculo del incentivo | 2028-03-01 | 2028-03-03 |
| Registro base del tiempo activo | 2028-05-17 | 2028-05-19 |
| Registro de evaluación del tiempo activo | 2028-06-21 | 2028-06-23 |
| Evaluación del piloto sin efectos de pago | 2028-07-04 | 2028-07-07 |
| Procedimiento de conciliación contractual habilitado | 2028-08-10 | 2028-08-11 |
| Plan ambiental y protocolo de comparación | 2027-12-03 | 2027-12-10 |
| Consentimiento, modelo y contratos definidos | 2028-01-03 | 2028-01-05 |
| Historial validado y cálculo por permanencia | 2028-01-05 | 2028-01-10 |
| Adhesión, acciones y portal ambiental | 2028-02-04 | 2028-02-09 |
| Integración, consentimiento y actualización de cortes | 2028-02-18 | 2028-02-22 |
| Pruebas de medición, privacidad y accesibilidad | 2028-03-02 | 2028-03-07 |
| Participantes y acciones preparados para el piloto | 2028-03-17 | 2028-03-22 |
| Registro base del consumo normalizado | 2028-05-18 | 2028-05-22 |
| Registro de evaluación del consumo normalizado | 2028-06-21 | 2028-06-23 |
| Evaluación ambiental y acta del piloto | 2028-06-29 | 2028-07-04 |
| Pasaporte y seguimiento transferidos a operación | 2028-08-10 | 2028-08-16 |
| Catálogo de fuentes y accesos | 2026-12-21 | 2026-12-23 |
| Extracción diagnóstica reproducible | 2027-01-07 | 2027-01-11 |
| Informe de calidad del origen | 2027-01-04 | 2027-01-06 |
| Matriz de cobertura y decisiones | 2027-02-16 | 2027-02-18 |
| Reglas: Socios y armadores | 2027-01-25 | 2027-01-27 |
| Reglas: Contratos vigentes y documentos | 2027-01-27 | 2027-01-29 |
| Reglas: Seis años de pagos y saldos | 2027-01-25 | 2027-01-27 |
| Reglas: Embarcaciones e invernadas | 2027-01-27 | 2027-01-29 |
| Reglas: 14 expedientes de abandono | 2027-01-25 | 2027-01-27 |
| Reglas: Tres años de matrícula escolar | 2027-01-27 | 2027-01-29 |
| Saneamiento automatizado: Socios y armadores | 2027-06-01 | 2027-06-03 |
| Saneamiento automatizado: Contratos vigentes y documentos | 2027-06-16 | 2027-06-18 |
| Saneamiento automatizado: Seis años de pagos y saldos | 2027-06-02 | 2027-06-04 |
| Saneamiento automatizado: Embarcaciones e invernadas | 2027-06-16 | 2027-06-18 |
| Saneamiento automatizado: 14 expedientes de abandono | 2027-06-04 | 2027-06-08 |
| Saneamiento automatizado: Tres años de matrícula escolar | 2027-06-16 | 2027-06-18 |
| Carga y conciliación: Socios y armadores | 2027-08-04 | 2027-08-09 |
| Carga y conciliación: Contratos vigentes y documentos | 2027-08-05 | 2027-08-10 |

| Task | Start | Finish |
| --- | --- | --- |
| Carga y conciliación: Seis años de pagos y saldos | 2027-08-04 | 2027-08-09 |
| Carga y conciliación: Embarcaciones e invernadas | 2027-08-05 | 2027-08-10 |
| Carga y conciliación: 14 expedientes de abandono | 2027-08-04 | 2027-08-09 |
| Carga y conciliación: Tres años de matrícula escolar | 2027-08-05 | 2027-08-10 |
| Repositorio e índice histórico | 2027-08-09 | 2027-08-11 |
| Consulta histórica con permisos | 2027-08-09 | 2027-08-11 |
| Exportación y comprobación de integridad | 2027-08-09 | 2027-08-11 |
| Detección y carga idempotente de delta | 2027-08-10 | 2027-08-12 |
| Herramientas de retorno previo | 2027-08-10 | 2027-08-12 |
| Herramientas de retorno posterior y diario | 2027-08-05 | 2027-08-09 |
| Seguimiento de innovación | 2028-08-16 | 2028-08-21 |
| Seguimiento de innovación IN1.7 | 2031-07-17 | 2031-07-17 |
| Seguimiento de innovación IN3.7 | 2031-07-17 | 2031-07-18 |
| Seguimiento de innovación IN4.4 | 2031-07-18 | 2031-07-22 |
| Seguimiento de innovación IN5.4 | 2031-07-21 | 2031-07-22 |
| Expediente de abandono revisado y vinculado 1 | 2027-06-02 | 2027-06-03 |
| Expediente de abandono revisado y vinculado 2 | 2027-06-02 | 2027-06-02 |
| Expediente de abandono revisado y vinculado 3 | 2027-06-03 | 2027-06-04 |
| Expediente de abandono revisado y vinculado 4 | 2027-06-01 | 2027-06-01 |
| Expediente de abandono revisado y vinculado 5 | 2027-06-01 | 2027-06-02 |
| Expediente de abandono revisado y vinculado 6 | 2027-06-02 | 2027-06-03 |
| Expediente de abandono revisado y vinculado 7 | 2027-06-02 | 2027-06-03 |
| Expediente de abandono revisado y vinculado 8 | 2027-06-03 | 2027-06-04 |
| Expediente de abandono revisado y vinculado 9 | 2027-06-04 | 2027-06-04 |
| Expediente de abandono revisado y vinculado 10 | 2027-06-03 | 2027-06-04 |
| Expediente de abandono revisado y vinculado 11 | 2027-06-04 | 2027-06-07 |
| Expediente de abandono revisado y vinculado 12 | 2027-06-04 | 2027-06-07 |
| Expediente de abandono revisado y vinculado 13 | 2027-06-01 | 2027-06-01 |
| Expediente de abandono revisado y vinculado 14 | 2027-06-01 | 2027-06-02 |
| Lote de hasta 32 autorizaciones escolares 1 | 2027-06-04 | 2027-06-07 |
| Lote de hasta 32 autorizaciones escolares 2 | 2027-06-01 | 2027-06-02 |
| Lote de hasta 32 autorizaciones escolares 3 | 2027-06-02 | 2027-06-03 |
| Lote de hasta 32 autorizaciones escolares 4 | 2027-06-04 | 2027-06-07 |
| Lote de hasta 32 autorizaciones escolares 5 | 2027-06-01 | 2027-06-02 |
| Lote de hasta 32 autorizaciones escolares 6 | 2027-06-01 | 2027-06-02 |
| Lote de hasta 32 autorizaciones escolares 7 | 2027-06-03 | 2027-06-04 |
| Lote de hasta 32 autorizaciones escolares 8 | 2027-06-01 | 2027-06-02 |
| Lote de hasta 32 autorizaciones escolares 9 | 2027-06-02 | 2027-06-03 |
| Lote de hasta 32 autorizaciones escolares 10 | 2027-06-01 | 2027-06-02 |
| Lote de hasta 32 autorizaciones escolares 11 | 2027-06-02 | 2027-06-03 |
| Lote de hasta 32 autorizaciones escolares 12 | 2027-06-03 | 2027-06-04 |
| Lote de hasta 32 autorizaciones escolares 13 | 2027-06-04 | 2027-06-07 |
| Lote de hasta 32 autorizaciones escolares 14 | 2027-06-04 | 2027-06-07 |
| Lote de hasta 32 autorizaciones escolares 15 | 2027-06-01 | 2027-06-02 |
| Lote de hasta 32 autorizaciones escolares 16 | 2027-06-02 | 2027-06-03 |
| Lote de hasta 32 autorizaciones escolares 17 | 2027-06-04 | 2027-06-07 |
| Lote de hasta 32 autorizaciones escolares 18 | 2027-06-01 | 2027-06-02 |
| Lote de hasta 32 autorizaciones escolares 19 | 2027-06-03 | 2027-06-04 |
| Lote de hasta 32 autorizaciones escolares 20 | 2027-06-02 | 2027-06-03 |
| Lote de hasta 32 autorizaciones escolares 21 | 2027-06-02 | 2027-06-04 |
| Lote de hasta 32 autorizaciones escolares 22 | 2027-06-03 | 2027-06-04 |
| Lote de hasta 32 autorizaciones escolares 23 | 2027-06-04 | 2027-06-07 |
| Lote de hasta 32 autorizaciones escolares 24 | 2027-06-01 | 2027-06-02 |
| Lote de hasta 32 autorizaciones escolares 25 | 2027-06-02 | 2027-06-03 |
| Lote de hasta 32 autorizaciones escolares 26 | 2027-06-03 | 2027-06-04 |
| Lote de hasta 32 autorizaciones escolares 27 | 2027-06-04 | 2027-06-07 |
| Lote de hasta 32 autorizaciones escolares 28 | 2027-06-04 | 2027-06-07 |
| Lote de hasta 32 autorizaciones escolares 29 | 2027-06-16 | 2027-06-17 |
| Lote de hasta 32 autorizaciones escolares 30 | 2027-06-16 | 2027-06-17 |
| Lote de hasta 32 autorizaciones escolares 31 | 2027-06-16 | 2027-06-17 |
| Lote de hasta 32 autorizaciones escolares 32 | 2027-06-16 | 2027-06-17 |
| Lote de hasta 32 autorizaciones escolares 33 | 2027-06-16 | 2027-06-17 |
| Lote de hasta 32 autorizaciones escolares 34 | 2027-06-17 | 2027-06-18 |
| Lote de hasta 32 autorizaciones escolares 35 | 2027-06-17 | 2027-06-18 |
| Lote de hasta 32 autorizaciones escolares 36 | 2027-06-17 | 2027-06-18 |
| Lote de hasta 32 autorizaciones escolares 37 | 2027-06-17 | 2027-06-18 |
| Lote de hasta 32 autorizaciones escolares 38 | 2027-06-17 | 2027-06-18 |
| Lote de hasta 32 autorizaciones escolares 39 | 2027-06-17 | 2027-06-22 |
| Lote de hasta 32 autorizaciones escolares 40 | 2027-06-17 | 2027-06-22 |
| Lote de hasta 32 autorizaciones escolares 41 | 2027-06-17 | 2027-06-22 |

| Task | Start | Finish |
| --- | --- | --- |
| Lote de hasta 32 autorizaciones escolares 42 | 2027-06-17 | 2027-06-22 |
| Lote de hasta 32 autorizaciones escolares 43 | 2027-06-18 | 2027-06-22 |
| Lote de hasta 32 autorizaciones escolares 44 | 2027-06-18 | 2027-06-22 |
| Lote de hasta 32 autorizaciones escolares 45 | 2027-06-18 | 2027-06-22 |
| Lote de hasta 32 autorizaciones escolares 46 | 2027-06-18 | 2027-06-22 |
| Lote de hasta 32 autorizaciones escolares 47 | 2027-06-18 | 2027-06-22 |
| Lote de hasta 32 autorizaciones escolares 48 | 2027-06-18 | 2027-06-22 |
| Lote de hasta 32 autorizaciones escolares 49 | 2027-06-18 | 2027-06-22 |
| Lote de hasta 32 autorizaciones escolares 50 | 2027-06-18 | 2027-06-22 |
| Lote de hasta 32 autorizaciones escolares 51 | 2027-06-18 | 2027-06-22 |
| Lote de hasta 32 autorizaciones escolares 52 | 2027-06-18 | 2027-06-22 |
| Lote de hasta 32 autorizaciones escolares 53 | 2027-06-22 | 2027-06-23 |
| Lote de hasta 32 autorizaciones escolares 54 | 2027-06-22 | 2027-06-23 |
| Lote de hasta 32 autorizaciones escolares 55 | 2027-06-22 | 2027-06-23 |
| Lote de hasta 32 autorizaciones escolares 56 | 2027-06-22 | 2027-06-23 |
| Lote de enrolamiento de hasta cuatro terminales 1 | 2027-04-06 | 2027-04-08 |
| Lote de enrolamiento de hasta cuatro terminales 2 | 2027-04-08 | 2027-04-12 |
| Lote de enrolamiento de hasta cuatro terminales 3 | 2027-04-09 | 2027-04-13 |
| Lote de enrolamiento de hasta cuatro terminales 4 | 2027-04-08 | 2027-04-09 |
| Lote de enrolamiento de hasta cuatro terminales 5 | 2027-04-09 | 2027-04-12 |
| Lote de enrolamiento de hasta cuatro terminales 6 | 2027-04-12 | 2027-04-14 |
| Lote de enrolamiento de hasta cuatro terminales 7 | 2027-04-06 | 2027-04-08 |
| Lote de enrolamiento de hasta cuatro terminales 8 | 2027-04-07 | 2027-04-09 |
| Lote de enrolamiento de hasta cuatro terminales 9 | 2027-04-08 | 2027-04-12 |
| Lote de enrolamiento de hasta cuatro terminales 10 | 2027-04-07 | 2027-04-09 |
| Recepción funcional de 40 puntos de medición 1 | 2027-04-09 | 2027-04-13 |
| Recepción funcional de 40 puntos de medición 2 | 2027-04-08 | 2027-04-12 |
| Recepción funcional de 40 puntos de medición 3 | 2027-04-09 | 2027-04-14 |
| Recepción funcional de 40 puntos de medición 4 | 2027-04-06 | 2027-04-08 |
| Recepción funcional de 40 puntos de medición 5 | 2027-04-07 | 2027-04-09 |
| Recepción funcional de 40 puntos de medición 6 | 2027-04-08 | 2027-04-12 |
| Recepción funcional de 40 puntos de medición 7 | 2027-04-09 | 2027-04-14 |
| Recepción funcional de 40 puntos de medición 8 | 2027-04-06 | 2027-04-08 |
| Recepción funcional de 40 puntos de medición 9 | 2027-04-07 | 2027-04-09 |
| Recepción funcional de 40 puntos de medición 10 | 2027-04-12 | 2027-04-14 |
| Recepción funcional de 40 puntos de medición 11 | 2027-04-06 | 2027-04-08 |
| Recepción funcional de 40 puntos de medición 12 | 2027-04-07 | 2027-04-09 |
| Recepción funcional de 40 puntos de medición 13 | 2027-04-08 | 2027-04-12 |
| Recepción funcional de 40 puntos de medición 14 | 2027-04-09 | 2027-04-14 |
| Recepción funcional de 40 puntos de medición 15 | 2027-04-06 | 2027-04-08 |
| Recepción funcional de 40 puntos de medición 16 | 2027-04-07 | 2027-04-09 |
| Adaptación de ensayo al universo E2 1 | 2028-01-19 | 2028-01-24 |
| Adaptación de ensayo al universo E2 2 | 2028-01-17 | 2028-01-20 |
| Adaptación de ensayo al universo E2 3 | 2028-01-19 | 2028-01-24 |
| Adaptación de ensayo al universo E2 4 | 2028-01-17 | 2028-01-20 |
| Sesión y certificación E1, perfil 1, cohorte 1 | 2027-11-03 | 2027-11-04 |
| Sesión y certificación E1, perfil 1, cohorte 2 | 2027-11-09 | 2027-11-10 |
| Sesión y certificación E1, perfil 1, cohorte 3 | 2027-11-04 | 2027-11-08 |
| Sesión y certificación E1, perfil 1, cohorte 4 | 2027-11-17 | 2027-11-18 |
| Sesión y certificación E1, perfil 1, cohorte 5 | 2027-11-22 | 2027-11-23 |
| Sesión y certificación E1, perfil 1, cohorte 6 | 2027-11-17 | 2027-11-18 |
| Sesión y certificación E1, perfil 1, cohorte 7 | 2027-11-18 | 2027-11-19 |
| Sesión y certificación E1, perfil 1, cohorte 8 | 2027-11-17 | 2027-11-18 |
| Sesión y certificación E1, perfil 1, cohorte 9 | 2027-11-17 | 2027-11-18 |
| Sesión y certificación E1, perfil 1, cohorte 10 | 2027-11-04 | 2027-11-05 |
| Sesión y certificación E1, perfil 1, cohorte 11 | 2027-11-03 | 2027-11-05 |
| Sesión y certificación E1, perfil 1, cohorte 12 | 2027-11-04 | 2027-11-08 |
| Sesión y certificación E1, perfil 1, cohorte 13 | 2027-11-05 | 2027-11-09 |
| Sesión y certificación E1, perfil 1, cohorte 14 | 2027-11-08 | 2027-11-10 |
| Sesión y certificación E1, perfil 1, cohorte 15 | 2027-11-10 | 2027-11-11 |
| Sesión y certificación E1, perfil 1, cohorte 16 | 2027-11-11 | 2027-11-12 |
| Sesión y certificación E1, perfil 1, cohorte 17 | 2027-11-04 | 2027-11-05 |
| Sesión y certificación E1, perfil 1, cohorte 18 | 2027-11-05 | 2027-11-08 |
| Sesión y certificación E1, perfil 1, cohorte 19 | 2027-11-08 | 2027-11-09 |
| Sesión y certificación E1, perfil 1, cohorte 20 | 2027-11-10 | 2027-11-12 |
| Sesión y certificación E1, perfil 1, cohorte 21 | 2027-11-11 | 2027-11-15 |
| Sesión y certificación E1, perfil 1, cohorte 22 | 2027-11-04 | 2027-11-05 |
| Sesión y certificación E1, perfil 1, cohorte 23 | 2027-11-05 | 2027-11-08 |
| Sesión y certificación E1, perfil 1, cohorte 24 | 2027-11-08 | 2027-11-10 |
| Sesión y certificación E1, perfil 1, cohorte 25 | 2027-11-09 | 2027-11-11 |

| Task | Start | Finish |
| --- | --- | --- |
| Sesión y certificación E1, perfil 1, cohorte 26 | 2027-11-10 | 2027-11-12 |
| Sesión y certificación E1, perfil 1, cohorte 27 | 2027-11-12 | 2027-11-15 |
| Sesión y certificación E1, perfil 1, cohorte 28 | 2027-11-08 | 2027-11-09 |
| Sesión y certificación E1, perfil 1, cohorte 29 | 2027-11-09 | 2027-11-10 |
| Sesión y certificación E1, perfil 1, cohorte 30 | 2027-11-10 | 2027-11-12 |
| Sesión y certificación E1, perfil 1, cohorte 31 | 2027-11-11 | 2027-11-15 |
| Sesión y certificación E1, perfil 1, cohorte 32 | 2027-11-12 | 2027-11-16 |
| Sesión y certificación E1, perfil 1, cohorte 33 | 2027-11-16 | 2027-11-17 |
| Sesión y certificación E1, perfil 1, cohorte 34 | 2027-11-16 | 2027-11-17 |
| Sesión y certificación E1, perfil 1, cohorte 35 | 2027-11-16 | 2027-11-17 |
| Sesión y certificación E1, perfil 1, cohorte 36 | 2027-11-16 | 2027-11-17 |
| Sesión y certificación E1, perfil 1, cohorte 37 | 2027-11-17 | 2027-11-18 |
| Sesión y certificación E1, perfil 1, cohorte 38 | 2027-11-17 | 2027-11-18 |
| Sesión y certificación E1, perfil 1, cohorte 39 | 2027-11-17 | 2027-11-18 |
| Sesión y certificación E1, perfil 1, cohorte 40 | 2027-11-17 | 2027-11-19 |
| Sesión y certificación E1, perfil 1, cohorte 41 | 2027-11-18 | 2027-11-19 |
| Sesión y certificación E1, perfil 1, cohorte 42 | 2027-11-18 | 2027-11-19 |
| Sesión y certificación E1, perfil 1, cohorte 43 | 2027-11-18 | 2027-11-19 |
| Sesión y certificación E1, perfil 1, cohorte 44 | 2027-11-18 | 2027-11-19 |
| Sesión y certificación E1, perfil 1, cohorte 45 | 2027-11-18 | 2027-11-22 |
| Sesión y certificación E1, perfil 1, cohorte 46 | 2027-11-19 | 2027-11-22 |
| Sesión y certificación E1, perfil 1, cohorte 47 | 2027-11-19 | 2027-11-22 |
| Sesión y certificación E1, perfil 1, cohorte 48 | 2027-11-19 | 2027-11-22 |
| Sesión y certificación E1, perfil 1, cohorte 49 | 2027-11-19 | 2027-11-23 |
| Sesión y certificación E1, perfil 1, cohorte 50 | 2027-11-22 | 2027-11-24 |
| Sesión y certificación E1, perfil 1, cohorte 51 | 2027-11-22 | 2027-11-24 |
| Sesión y certificación E1, perfil 1, cohorte 52 | 2027-11-16 | 2027-11-17 |
| Sesión y certificación E1, perfil 1, cohorte 53 | 2027-11-02 | 2027-11-03 |
| Sesión y certificación E1, perfil 1, cohorte 54 | 2027-11-03 | 2027-11-04 |
| Sesión y certificación E1, perfil 1, cohorte 55 | 2027-11-04 | 2027-11-05 |
| Sesión y certificación E1, perfil 1, cohorte 56 | 2027-11-05 | 2027-11-08 |
| Sesión y certificación E1, perfil 1, cohorte 57 | 2027-11-08 | 2027-11-09 |
| Sesión y certificación E1, perfil 1, cohorte 58 | 2027-11-09 | 2027-11-10 |
| Sesión y certificación E1, perfil 1, cohorte 59 | 2027-11-16 | 2027-11-17 |
| Sesión y certificación E1, perfil 1, cohorte 60 | 2027-11-18 | 2027-11-19 |
| Sesión y certificación E1, perfil 1, cohorte 61 | 2027-11-19 | 2027-11-22 |
| Sesión y certificación E1, perfil 1, cohorte 62 | 2027-11-22 | 2027-11-24 |
| Sesión y certificación E1, perfil 1, cohorte 63 | 2027-11-03 | 2027-11-04 |
| Sesión y certificación E1, perfil 1, cohorte 64 | 2027-11-04 | 2027-11-05 |
| Sesión y certificación E1, perfil 1, cohorte 65 | 2027-11-05 | 2027-11-08 |
| Sesión y certificación E1, perfil 1, cohorte 66 | 2027-11-08 | 2027-11-10 |
| Sesión y certificación E1, perfil 1, cohorte 67 | 2027-11-09 | 2027-11-11 |
| Sesión y certificación E1, perfil 1, cohorte 68 | 2027-11-10 | 2027-11-12 |
| Sesión y certificación E1, perfil 1, cohorte 69 | 2027-11-17 | 2027-11-18 |
| Sesión y certificación E1, perfil 1, cohorte 70 | 2027-11-19 | 2027-11-22 |
| Sesión y certificación E1, perfil 1, cohorte 71 | 2027-11-22 | 2027-11-23 |
| Sesión y certificación E1, perfil 1, cohorte 72 | 2027-11-16 | 2027-11-17 |
| Sesión y certificación E1, perfil 1, cohorte 73 | 2027-11-02 | 2027-11-03 |
| Sesión y certificación E1, perfil 1, cohorte 74 | 2027-11-03 | 2027-11-04 |
| Sesión y certificación E1, perfil 1, cohorte 75 | 2027-11-04 | 2027-11-05 |
| Sesión y certificación E1, perfil 1, cohorte 76 | 2027-11-05 | 2027-11-08 |
| Sesión y certificación E1, perfil 1, cohorte 77 | 2027-11-08 | 2027-11-09 |
| Sesión y certificación E1, perfil 1, cohorte 78 | 2027-11-09 | 2027-11-10 |
| Sesión y certificación E1, perfil 1, cohorte 79 | 2027-11-16 | 2027-11-17 |
| Sesión y certificación E1, perfil 1, cohorte 80 | 2027-11-18 | 2027-11-19 |
| Sesión y certificación E1, perfil 1, cohorte 81 | 2027-11-19 | 2027-11-22 |
| Sesión y certificación E1, perfil 1, cohorte 82 | 2027-11-22 | 2027-11-24 |
| Sesión y certificación E1, perfil 1, cohorte 83 | 2027-11-03 | 2027-11-04 |
| Sesión y certificación E1, perfil 1, cohorte 84 | 2027-11-05 | 2027-11-09 |
| Sesión y certificación E1, perfil 1, cohorte 85 | 2027-11-09 | 2027-11-10 |
| Sesión y certificación E1, perfil 1, cohorte 86 | 2027-11-19 | 2027-11-23 |
| Sesión y certificación E1, perfil 1, cohorte 87 | 2027-11-04 | 2027-11-05 |
| Sesión y certificación E1, perfil 1, cohorte 88 | 2027-11-10 | 2027-11-11 |
| Sesión y certificación E1, perfil 1, cohorte 89 | 2027-11-11 | 2027-11-12 |
| Sesión y certificación E1, perfil 1, cohorte 90 | 2027-11-18 | 2027-11-19 |
| Sesión y certificación E1, perfil 1, cohorte 91 | 2027-11-16 | 2027-11-17 |
| Sesión y certificación E1, perfil 1, cohorte 92 | 2027-11-02 | 2027-11-03 |
| Sesión y certificación E1, perfil 1, cohorte 93 | 2027-11-03 | 2027-11-04 |
| Sesión y certificación E1, perfil 1, cohorte 94 | 2027-11-04 | 2027-11-05 |
| Sesión y certificación E1, perfil 1, cohorte 95 | 2027-11-05 | 2027-11-08 |

| Task | Start | Finish |
| --- | --- | --- |
| Sesión y certificación E1, perfil 1, cohorte 96 | 2027-11-08 | 2027-11-09 |
| Sesión y certificación E1, perfil 1, cohorte 97 | 2027-11-09 | 2027-11-10 |
| Sesión y certificación E1, perfil 1, cohorte 98 | 2027-11-16 | 2027-11-17 |
| Sesión y certificación E1, perfil 1, cohorte 99 | 2027-11-17 | 2027-11-18 |
| Sesión y certificación E1, perfil 1, cohorte 100 | 2027-11-05 | 2027-11-08 |
| Sesión y certificación E1, perfil 2, cohorte 1 | 2027-11-18 | 2027-11-19 |
| Sesión y certificación E1, perfil 2, cohorte 2 | 2027-11-19 | 2027-11-22 |
| Sesión y certificación E1, perfil 3, cohorte 1 | 2027-11-22 | 2027-11-24 |
| Sesión y certificación E1, perfil 4, cohorte 1 | 2027-11-03 | 2027-11-04 |
| Sesión y certificación E1, perfil 5, cohorte 1 | 2027-11-04 | 2027-11-05 |
| Sesión y certificación E1, perfil 5, cohorte 2 | 2027-11-05 | 2027-11-08 |
| Sesión y certificación E1, perfil 5, cohorte 3 | 2027-11-08 | 2027-11-10 |
| Acompañamiento E1, ola 1, día 1, zona 1 | 2027-12-01 | 2027-12-01 |
| Acompañamiento E1, ola 1, día 1, zona 2 | 2027-12-01 | 2027-12-01 |
| Acompañamiento E1, ola 1, día 2, zona 1 | 2027-12-02 | 2027-12-02 |
| Acompañamiento E1, ola 1, día 2, zona 2 | 2027-12-02 | 2027-12-02 |
| Acompañamiento E1, ola 1, día 3, zona 1 | 2027-12-03 | 2027-12-03 |
| Acompañamiento E1, ola 1, día 3, zona 2 | 2027-12-03 | 2027-12-03 |
| Acompañamiento E1, ola 1, día 4, zona 1 | 2027-12-04 | 2027-12-04 |
| Acompañamiento E1, ola 1, día 4, zona 2 | 2027-12-04 | 2027-12-04 |
| Acompañamiento E1, ola 1, día 5, zona 1 | 2027-12-05 | 2027-12-05 |
| Acompañamiento E1, ola 1, día 5, zona 2 | 2027-12-05 | 2027-12-05 |
| Acompañamiento E1, ola 1, día 6, zona 1 | 2027-12-06 | 2027-12-06 |
| Acompañamiento E1, ola 1, día 6, zona 2 | 2027-12-06 | 2027-12-06 |
| Acompañamiento E1, ola 1, día 7, zona 1 | 2027-12-07 | 2027-12-07 |
| Acompañamiento E1, ola 1, día 7, zona 2 | 2027-12-07 | 2027-12-07 |
| Acompañamiento E1, ola 1, día 8, zona 1 | 2027-12-08 | 2027-12-08 |
| Acompañamiento E1, ola 1, día 8, zona 2 | 2027-12-08 | 2027-12-08 |
| Acompañamiento E1, ola 1, día 9, zona 1 | 2027-12-09 | 2027-12-09 |
| Acompañamiento E1, ola 1, día 9, zona 2 | 2027-12-09 | 2027-12-09 |
| Acompañamiento E1, ola 1, día 10, zona 1 | 2027-12-10 | 2027-12-10 |
| Acompañamiento E1, ola 1, día 10, zona 2 | 2027-12-10 | 2027-12-10 |
| Acompañamiento E1, ola 1, día 11, zona 1 | 2027-12-11 | 2027-12-11 |
| Acompañamiento E1, ola 1, día 11, zona 2 | 2027-12-11 | 2027-12-11 |
| Acompañamiento E1, ola 1, día 12, zona 1 | 2027-12-12 | 2027-12-12 |
| Acompañamiento E1, ola 1, día 12, zona 2 | 2027-12-12 | 2027-12-12 |
| Acompañamiento E1, ola 1, día 13, zona 1 | 2027-12-13 | 2027-12-13 |
| Acompañamiento E1, ola 1, día 13, zona 2 | 2027-12-13 | 2027-12-13 |
| Acompañamiento E1, ola 1, día 14, zona 1 | 2027-12-14 | 2027-12-14 |
| Acompañamiento E1, ola 1, día 14, zona 2 | 2027-12-14 | 2027-12-14 |
| Acompañamiento E1, ola 1, día 15, zona 1 | 2027-12-15 | 2027-12-15 |
| Acompañamiento E1, ola 1, día 15, zona 2 | 2027-12-15 | 2027-12-15 |
| Acompañamiento E1, ola 1, día 16, zona 1 | 2027-12-16 | 2027-12-16 |
| Acompañamiento E1, ola 1, día 16, zona 2 | 2027-12-16 | 2027-12-16 |
| Acompañamiento E1, ola 1, día 17, zona 1 | 2027-12-17 | 2027-12-17 |
| Acompañamiento E1, ola 1, día 17, zona 2 | 2027-12-17 | 2027-12-17 |
| Acompañamiento E1, ola 1, día 18, zona 1 | 2027-12-18 | 2027-12-18 |
| Acompañamiento E1, ola 1, día 18, zona 2 | 2027-12-18 | 2027-12-18 |
| Acompañamiento E1, ola 1, día 19, zona 1 | 2027-12-19 | 2027-12-19 |
| Acompañamiento E1, ola 1, día 19, zona 2 | 2027-12-19 | 2027-12-19 |
| Acompañamiento E1, ola 1, día 20, zona 1 | 2027-12-20 | 2027-12-20 |
| Acompañamiento E1, ola 1, día 20, zona 2 | 2027-12-20 | 2027-12-20 |
| Acompañamiento E1, ola 1, día 21, zona 1 | 2027-12-21 | 2027-12-21 |
| Acompañamiento E1, ola 1, día 21, zona 2 | 2027-12-21 | 2027-12-21 |
| Acompañamiento E1, ola 1, día 22, zona 1 | 2027-12-22 | 2027-12-22 |
| Acompañamiento E1, ola 1, día 22, zona 2 | 2027-12-22 | 2027-12-22 |
| Acompañamiento E1, ola 1, día 23, zona 1 | 2027-12-23 | 2027-12-23 |
| Acompañamiento E1, ola 1, día 23, zona 2 | 2027-12-23 | 2027-12-23 |
| Acompañamiento E1, ola 1, día 24, zona 1 | 2027-12-24 | 2027-12-24 |
| Acompañamiento E1, ola 1, día 24, zona 2 | 2027-12-24 | 2027-12-24 |
| Acompañamiento E1, ola 1, día 25, zona 1 | 2027-12-25 | 2027-12-25 |
| Acompañamiento E1, ola 1, día 25, zona 2 | 2027-12-25 | 2027-12-25 |
| Acompañamiento E1, ola 1, día 26, zona 1 | 2027-12-26 | 2027-12-26 |
| Acompañamiento E1, ola 1, día 26, zona 2 | 2027-12-26 | 2027-12-26 |
| Acompañamiento E1, ola 1, día 27, zona 1 | 2027-12-27 | 2027-12-27 |
| Acompañamiento E1, ola 1, día 27, zona 2 | 2027-12-27 | 2027-12-27 |
| Acompañamiento E1, ola 1, día 28, zona 1 | 2027-12-28 | 2027-12-28 |
| Acompañamiento E1, ola 1, día 28, zona 2 | 2027-12-28 | 2027-12-28 |
| Acompañamiento E1, ola 2, día 1, zona 1 | 2027-12-01 | 2027-12-01 |
| Acompañamiento E1, ola 2, día 1, zona 2 | 2027-12-01 | 2027-12-01 |

| Task | Start | Finish |
| --- | --- | --- |
| Acompañamiento E1, ola 2, día 2, zona 1 | 2027-12-02 | 2027-12-02 |
| Acompañamiento E1, ola 2, día 2, zona 2 | 2027-12-02 | 2027-12-02 |
| Acompañamiento E1, ola 2, día 3, zona 1 | 2027-12-03 | 2027-12-03 |
| Acompañamiento E1, ola 2, día 3, zona 2 | 2027-12-03 | 2027-12-03 |
| Acompañamiento E1, ola 2, día 4, zona 1 | 2027-12-04 | 2027-12-04 |
| Acompañamiento E1, ola 2, día 4, zona 2 | 2027-12-04 | 2027-12-04 |
| Acompañamiento E1, ola 2, día 5, zona 1 | 2027-12-05 | 2027-12-05 |
| Acompañamiento E1, ola 2, día 5, zona 2 | 2027-12-05 | 2027-12-05 |
| Acompañamiento E1, ola 2, día 6, zona 1 | 2027-12-06 | 2027-12-06 |
| Acompañamiento E1, ola 2, día 6, zona 2 | 2027-12-06 | 2027-12-06 |
| Acompañamiento E1, ola 2, día 7, zona 1 | 2027-12-07 | 2027-12-07 |
| Acompañamiento E1, ola 2, día 7, zona 2 | 2027-12-07 | 2027-12-07 |
| Acompañamiento E1, ola 2, día 8, zona 1 | 2027-12-08 | 2027-12-08 |
| Acompañamiento E1, ola 2, día 8, zona 2 | 2027-12-08 | 2027-12-08 |
| Acompañamiento E1, ola 2, día 9, zona 1 | 2027-12-09 | 2027-12-09 |
| Acompañamiento E1, ola 2, día 9, zona 2 | 2027-12-09 | 2027-12-09 |
| Acompañamiento E1, ola 2, día 10, zona 1 | 2027-12-10 | 2027-12-10 |
| Acompañamiento E1, ola 2, día 10, zona 2 | 2027-12-10 | 2027-12-10 |
| Acompañamiento E1, ola 2, día 11, zona 1 | 2027-12-11 | 2027-12-11 |
| Acompañamiento E1, ola 2, día 11, zona 2 | 2027-12-11 | 2027-12-11 |
| Acompañamiento E1, ola 2, día 12, zona 1 | 2027-12-12 | 2027-12-12 |
| Acompañamiento E1, ola 2, día 12, zona 2 | 2027-12-12 | 2027-12-12 |
| Acompañamiento E1, ola 2, día 13, zona 1 | 2027-12-13 | 2027-12-13 |
| Acompañamiento E1, ola 2, día 13, zona 2 | 2027-12-13 | 2027-12-13 |
| Acompañamiento E1, ola 2, día 14, zona 1 | 2027-12-14 | 2027-12-14 |
| Acompañamiento E1, ola 2, día 14, zona 2 | 2027-12-14 | 2027-12-14 |
| Acompañamiento E1, ola 2, día 15, zona 1 | 2027-12-15 | 2027-12-15 |
| Acompañamiento E1, ola 2, día 15, zona 2 | 2027-12-15 | 2027-12-15 |
| Acompañamiento E1, ola 2, día 16, zona 1 | 2027-12-16 | 2027-12-16 |
| Acompañamiento E1, ola 2, día 16, zona 2 | 2027-12-16 | 2027-12-16 |
| Acompañamiento E1, ola 2, día 17, zona 1 | 2027-12-17 | 2027-12-17 |
| Acompañamiento E1, ola 2, día 17, zona 2 | 2027-12-17 | 2027-12-17 |
| Acompañamiento E1, ola 2, día 18, zona 1 | 2027-12-18 | 2027-12-18 |
| Acompañamiento E1, ola 2, día 18, zona 2 | 2027-12-18 | 2027-12-18 |
| Acompañamiento E1, ola 2, día 19, zona 1 | 2027-12-19 | 2027-12-19 |
| Acompañamiento E1, ola 2, día 19, zona 2 | 2027-12-19 | 2027-12-19 |
| Acompañamiento E1, ola 2, día 20, zona 1 | 2027-12-20 | 2027-12-20 |
| Acompañamiento E1, ola 2, día 20, zona 2 | 2027-12-20 | 2027-12-20 |
| Acompañamiento E1, ola 2, día 21, zona 1 | 2027-12-21 | 2027-12-21 |
| Acompañamiento E1, ola 2, día 21, zona 2 | 2027-12-21 | 2027-12-21 |
| Acompañamiento E1, ola 2, día 22, zona 1 | 2027-12-22 | 2027-12-22 |
| Acompañamiento E1, ola 2, día 22, zona 2 | 2027-12-22 | 2027-12-22 |
| Acompañamiento E1, ola 2, día 23, zona 1 | 2027-12-23 | 2027-12-23 |
| Acompañamiento E1, ola 2, día 23, zona 2 | 2027-12-23 | 2027-12-23 |
| Acompañamiento E1, ola 2, día 24, zona 1 | 2027-12-24 | 2027-12-24 |
| Acompañamiento E1, ola 2, día 24, zona 2 | 2027-12-24 | 2027-12-24 |
| Acompañamiento E1, ola 2, día 25, zona 1 | 2027-12-25 | 2027-12-25 |
| Acompañamiento E1, ola 2, día 25, zona 2 | 2027-12-25 | 2027-12-25 |
| Acompañamiento E1, ola 2, día 26, zona 1 | 2027-12-26 | 2027-12-26 |
| Acompañamiento E1, ola 2, día 26, zona 2 | 2027-12-26 | 2027-12-26 |
| Acompañamiento E1, ola 2, día 27, zona 1 | 2027-12-27 | 2027-12-27 |
| Acompañamiento E1, ola 2, día 27, zona 2 | 2027-12-27 | 2027-12-27 |
| Acompañamiento E1, ola 2, día 28, zona 1 | 2027-12-28 | 2027-12-28 |
| Acompañamiento E1, ola 2, día 28, zona 2 | 2027-12-28 | 2027-12-28 |
| Acompañamiento E1, ola 3, día 1, zona 1 | 2027-12-01 | 2027-12-01 |
| Acompañamiento E1, ola 3, día 1, zona 2 | 2027-12-01 | 2027-12-01 |
| Acompañamiento E1, ola 3, día 2, zona 1 | 2027-12-02 | 2027-12-02 |
| Acompañamiento E1, ola 3, día 2, zona 2 | 2027-12-02 | 2027-12-02 |
| Acompañamiento E1, ola 3, día 3, zona 1 | 2027-12-03 | 2027-12-03 |
| Acompañamiento E1, ola 3, día 3, zona 2 | 2027-12-03 | 2027-12-03 |
| Acompañamiento E1, ola 3, día 4, zona 1 | 2027-12-04 | 2027-12-04 |
| Acompañamiento E1, ola 3, día 4, zona 2 | 2027-12-04 | 2027-12-04 |
| Acompañamiento E1, ola 3, día 5, zona 1 | 2027-12-05 | 2027-12-05 |
| Acompañamiento E1, ola 3, día 5, zona 2 | 2027-12-05 | 2027-12-05 |
| Acompañamiento E1, ola 3, día 6, zona 1 | 2027-12-06 | 2027-12-06 |
| Acompañamiento E1, ola 3, día 6, zona 2 | 2027-12-06 | 2027-12-06 |
| Acompañamiento E1, ola 3, día 7, zona 1 | 2027-12-07 | 2027-12-07 |
| Acompañamiento E1, ola 3, día 7, zona 2 | 2027-12-07 | 2027-12-07 |
| Acompañamiento E1, ola 3, día 8, zona 1 | 2027-12-08 | 2027-12-08 |
| Acompañamiento E1, ola 3, día 8, zona 2 | 2027-12-08 | 2027-12-08 |

| Task | Start | Finish |
| --- | --- | --- |
| Acompañamiento E1, ola 3, día 9, zona 1 | 2027-12-09 | 2027-12-09 |
| Acompañamiento E1, ola 3, día 9, zona 2 | 2027-12-09 | 2027-12-09 |
| Acompañamiento E1, ola 3, día 10, zona 1 | 2027-12-10 | 2027-12-10 |
| Acompañamiento E1, ola 3, día 10, zona 2 | 2027-12-10 | 2027-12-10 |
| Acompañamiento E1, ola 3, día 11, zona 1 | 2027-12-11 | 2027-12-11 |
| Acompañamiento E1, ola 3, día 11, zona 2 | 2027-12-11 | 2027-12-11 |
| Acompañamiento E1, ola 3, día 12, zona 1 | 2027-12-12 | 2027-12-12 |
| Acompañamiento E1, ola 3, día 12, zona 2 | 2027-12-12 | 2027-12-12 |
| Acompañamiento E1, ola 3, día 13, zona 1 | 2027-12-13 | 2027-12-13 |
| Acompañamiento E1, ola 3, día 13, zona 2 | 2027-12-13 | 2027-12-13 |
| Acompañamiento E1, ola 3, día 14, zona 1 | 2027-12-14 | 2027-12-14 |
| Acompañamiento E1, ola 3, día 14, zona 2 | 2027-12-14 | 2027-12-14 |
| Acompañamiento E1, ola 3, día 15, zona 1 | 2027-12-15 | 2027-12-15 |
| Acompañamiento E1, ola 3, día 15, zona 2 | 2027-12-15 | 2027-12-15 |
| Acompañamiento E1, ola 3, día 16, zona 1 | 2027-12-16 | 2027-12-16 |
| Acompañamiento E1, ola 3, día 16, zona 2 | 2027-12-16 | 2027-12-16 |
| Acompañamiento E1, ola 3, día 17, zona 1 | 2027-12-17 | 2027-12-17 |
| Acompañamiento E1, ola 3, día 17, zona 2 | 2027-12-17 | 2027-12-17 |
| Acompañamiento E1, ola 3, día 18, zona 1 | 2027-12-18 | 2027-12-18 |
| Acompañamiento E1, ola 3, día 18, zona 2 | 2027-12-18 | 2027-12-18 |
| Acompañamiento E1, ola 3, día 19, zona 1 | 2027-12-19 | 2027-12-19 |
| Acompañamiento E1, ola 3, día 19, zona 2 | 2027-12-19 | 2027-12-19 |
| Acompañamiento E1, ola 3, día 20, zona 1 | 2027-12-20 | 2027-12-20 |
| Acompañamiento E1, ola 3, día 20, zona 2 | 2027-12-20 | 2027-12-20 |
| Acompañamiento E1, ola 3, día 21, zona 1 | 2027-12-21 | 2027-12-21 |
| Acompañamiento E1, ola 3, día 21, zona 2 | 2027-12-21 | 2027-12-21 |
| Acompañamiento E1, ola 3, día 22, zona 1 | 2027-12-22 | 2027-12-22 |
| Acompañamiento E1, ola 3, día 22, zona 2 | 2027-12-22 | 2027-12-22 |
| Acompañamiento E1, ola 3, día 23, zona 1 | 2027-12-23 | 2027-12-23 |
| Acompañamiento E1, ola 3, día 23, zona 2 | 2027-12-23 | 2027-12-23 |
| Acompañamiento E1, ola 3, día 24, zona 1 | 2027-12-24 | 2027-12-24 |
| Acompañamiento E1, ola 3, día 24, zona 2 | 2027-12-24 | 2027-12-24 |
| Acompañamiento E1, ola 3, día 25, zona 1 | 2027-12-25 | 2027-12-25 |
| Acompañamiento E1, ola 3, día 25, zona 2 | 2027-12-25 | 2027-12-25 |
| Acompañamiento E1, ola 3, día 26, zona 1 | 2027-12-26 | 2027-12-26 |
| Acompañamiento E1, ola 3, día 26, zona 2 | 2027-12-26 | 2027-12-26 |
| Acompañamiento E1, ola 3, día 27, zona 1 | 2027-12-27 | 2027-12-27 |
| Acompañamiento E1, ola 3, día 27, zona 2 | 2027-12-27 | 2027-12-27 |
| Acompañamiento E1, ola 3, día 28, zona 1 | 2027-12-28 | 2027-12-28 |
| Acompañamiento E1, ola 3, día 28, zona 2 | 2027-12-28 | 2027-12-28 |
| Acompañamiento E1, ola 4, día 1, zona 1 | 2027-12-01 | 2027-12-01 |
| Acompañamiento E1, ola 4, día 1, zona 2 | 2027-12-01 | 2027-12-01 |
| Acompañamiento E1, ola 4, día 2, zona 1 | 2027-12-02 | 2027-12-02 |
| Acompañamiento E1, ola 4, día 2, zona 2 | 2027-12-02 | 2027-12-02 |
| Acompañamiento E1, ola 4, día 3, zona 1 | 2027-12-03 | 2027-12-03 |
| Acompañamiento E1, ola 4, día 3, zona 2 | 2027-12-03 | 2027-12-03 |
| Acompañamiento E1, ola 4, día 4, zona 1 | 2027-12-04 | 2027-12-04 |
| Acompañamiento E1, ola 4, día 4, zona 2 | 2027-12-04 | 2027-12-04 |
| Acompañamiento E1, ola 4, día 5, zona 1 | 2027-12-05 | 2027-12-05 |
| Acompañamiento E1, ola 4, día 5, zona 2 | 2027-12-05 | 2027-12-05 |
| Acompañamiento E1, ola 4, día 6, zona 1 | 2027-12-06 | 2027-12-06 |
| Acompañamiento E1, ola 4, día 6, zona 2 | 2027-12-06 | 2027-12-06 |
| Acompañamiento E1, ola 4, día 7, zona 1 | 2027-12-07 | 2027-12-07 |
| Acompañamiento E1, ola 4, día 7, zona 2 | 2027-12-07 | 2027-12-07 |
| Acompañamiento E1, ola 4, día 8, zona 1 | 2027-12-08 | 2027-12-08 |
| Acompañamiento E1, ola 4, día 8, zona 2 | 2027-12-08 | 2027-12-08 |
| Acompañamiento E1, ola 4, día 9, zona 1 | 2027-12-09 | 2027-12-09 |
| Acompañamiento E1, ola 4, día 9, zona 2 | 2027-12-09 | 2027-12-09 |
| Acompañamiento E1, ola 4, día 10, zona 1 | 2027-12-10 | 2027-12-10 |
| Acompañamiento E1, ola 4, día 10, zona 2 | 2027-12-10 | 2027-12-10 |
| Acompañamiento E1, ola 4, día 11, zona 1 | 2027-12-11 | 2027-12-11 |
| Acompañamiento E1, ola 4, día 11, zona 2 | 2027-12-11 | 2027-12-11 |
| Acompañamiento E1, ola 4, día 12, zona 1 | 2027-12-12 | 2027-12-12 |
| Acompañamiento E1, ola 4, día 12, zona 2 | 2027-12-12 | 2027-12-12 |
| Acompañamiento E1, ola 4, día 13, zona 1 | 2027-12-13 | 2027-12-13 |
| Acompañamiento E1, ola 4, día 13, zona 2 | 2027-12-13 | 2027-12-13 |
| Acompañamiento E1, ola 4, día 14, zona 1 | 2027-12-14 | 2027-12-14 |
| Acompañamiento E1, ola 4, día 14, zona 2 | 2027-12-14 | 2027-12-14 |
| Acompañamiento E1, ola 4, día 15, zona 1 | 2027-12-15 | 2027-12-15 |
| Acompañamiento E1, ola 4, día 15, zona 2 | 2027-12-15 | 2027-12-15 |

| Task | Start | Finish |
| --- | --- | --- |
| Acompañamiento E1, ola 4, día 16, zona 1 | 2027-12-16 | 2027-12-16 |
| Acompañamiento E1, ola 4, día 16, zona 2 | 2027-12-16 | 2027-12-16 |
| Acompañamiento E1, ola 4, día 17, zona 1 | 2027-12-17 | 2027-12-17 |
| Acompañamiento E1, ola 4, día 17, zona 2 | 2027-12-17 | 2027-12-17 |
| Acompañamiento E1, ola 4, día 18, zona 1 | 2027-12-18 | 2027-12-18 |
| Acompañamiento E1, ola 4, día 18, zona 2 | 2027-12-18 | 2027-12-18 |
| Acompañamiento E1, ola 4, día 19, zona 1 | 2027-12-19 | 2027-12-19 |
| Acompañamiento E1, ola 4, día 19, zona 2 | 2027-12-19 | 2027-12-19 |
| Acompañamiento E1, ola 4, día 20, zona 1 | 2027-12-20 | 2027-12-20 |
| Acompañamiento E1, ola 4, día 20, zona 2 | 2027-12-20 | 2027-12-20 |
| Acompañamiento E1, ola 4, día 21, zona 1 | 2027-12-21 | 2027-12-21 |
| Acompañamiento E1, ola 4, día 21, zona 2 | 2027-12-21 | 2027-12-21 |
| Acompañamiento E1, ola 4, día 22, zona 1 | 2027-12-22 | 2027-12-22 |
| Acompañamiento E1, ola 4, día 22, zona 2 | 2027-12-22 | 2027-12-22 |
| Acompañamiento E1, ola 4, día 23, zona 1 | 2027-12-23 | 2027-12-23 |
| Acompañamiento E1, ola 4, día 23, zona 2 | 2027-12-23 | 2027-12-23 |
| Acompañamiento E1, ola 4, día 24, zona 1 | 2027-12-24 | 2027-12-24 |
| Acompañamiento E1, ola 4, día 24, zona 2 | 2027-12-24 | 2027-12-24 |
| Acompañamiento E1, ola 4, día 25, zona 1 | 2027-12-25 | 2027-12-25 |
| Acompañamiento E1, ola 4, día 25, zona 2 | 2027-12-25 | 2027-12-25 |
| Acompañamiento E1, ola 4, día 26, zona 1 | 2027-12-26 | 2027-12-26 |
| Acompañamiento E1, ola 4, día 26, zona 2 | 2027-12-26 | 2027-12-26 |
| Acompañamiento E1, ola 4, día 27, zona 1 | 2027-12-27 | 2027-12-27 |
| Acompañamiento E1, ola 4, día 27, zona 2 | 2027-12-27 | 2027-12-27 |
| Acompañamiento E1, ola 4, día 28, zona 1 | 2027-12-28 | 2027-12-28 |
| Acompañamiento E1, ola 4, día 28, zona 2 | 2027-12-28 | 2027-12-28 |
| Estabilización presencial E1, día 1, zona 1 | 2028-04-01 | 2028-04-01 |
| Estabilización presencial E1, día 1, zona 2 | 2028-04-01 | 2028-04-01 |
| Estabilización presencial E1, día 2, zona 1 | 2028-04-02 | 2028-04-02 |
| Estabilización presencial E1, día 2, zona 2 | 2028-04-02 | 2028-04-02 |
| Estabilización presencial E1, día 3, zona 1 | 2028-04-03 | 2028-04-03 |
| Estabilización presencial E1, día 3, zona 2 | 2028-04-03 | 2028-04-03 |
| Estabilización presencial E1, día 4, zona 1 | 2028-04-04 | 2028-04-04 |
| Estabilización presencial E1, día 4, zona 2 | 2028-04-04 | 2028-04-04 |
| Estabilización presencial E1, día 5, zona 1 | 2028-04-05 | 2028-04-05 |
| Estabilización presencial E1, día 5, zona 2 | 2028-04-05 | 2028-04-05 |
| Estabilización presencial E1, día 6, zona 1 | 2028-04-06 | 2028-04-06 |
| Estabilización presencial E1, día 6, zona 2 | 2028-04-06 | 2028-04-06 |
| Estabilización presencial E1, día 7, zona 1 | 2028-04-07 | 2028-04-07 |
| Estabilización presencial E1, día 7, zona 2 | 2028-04-07 | 2028-04-07 |
| Estabilización presencial E1, día 8, zona 1 | 2028-04-08 | 2028-04-08 |
| Estabilización presencial E1, día 8, zona 2 | 2028-04-08 | 2028-04-08 |
| Estabilización presencial E1, día 9, zona 1 | 2028-04-09 | 2028-04-09 |
| Estabilización presencial E1, día 9, zona 2 | 2028-04-09 | 2028-04-09 |
| Estabilización presencial E1, día 10, zona 1 | 2028-04-10 | 2028-04-10 |
| Estabilización presencial E1, día 10, zona 2 | 2028-04-10 | 2028-04-10 |
| Estabilización presencial E1, día 11, zona 1 | 2028-04-11 | 2028-04-11 |
| Estabilización presencial E1, día 11, zona 2 | 2028-04-11 | 2028-04-11 |
| Estabilización presencial E1, día 12, zona 1 | 2028-04-12 | 2028-04-12 |
| Estabilización presencial E1, día 12, zona 2 | 2028-04-12 | 2028-04-12 |
| Estabilización presencial E1, día 13, zona 1 | 2028-04-13 | 2028-04-13 |
| Estabilización presencial E1, día 13, zona 2 | 2028-04-13 | 2028-04-13 |
| Estabilización presencial E1, día 14, zona 1 | 2028-04-14 | 2028-04-14 |
| Estabilización presencial E1, día 14, zona 2 | 2028-04-14 | 2028-04-14 |
| Estabilización presencial E1, día 15, zona 1 | 2028-04-15 | 2028-04-15 |
| Estabilización presencial E1, día 15, zona 2 | 2028-04-15 | 2028-04-15 |
| Estabilización presencial E1, día 16, zona 1 | 2028-04-16 | 2028-04-16 |
| Estabilización presencial E1, día 16, zona 2 | 2028-04-16 | 2028-04-16 |
| Estabilización presencial E1, día 17, zona 1 | 2028-04-17 | 2028-04-17 |
| Estabilización presencial E1, día 17, zona 2 | 2028-04-17 | 2028-04-17 |
| Estabilización presencial E1, día 18, zona 1 | 2028-04-18 | 2028-04-18 |
| Estabilización presencial E1, día 18, zona 2 | 2028-04-18 | 2028-04-18 |
| Estabilización presencial E1, día 19, zona 1 | 2028-04-19 | 2028-04-19 |
| Estabilización presencial E1, día 19, zona 2 | 2028-04-19 | 2028-04-19 |
| Estabilización presencial E1, día 20, zona 1 | 2028-04-20 | 2028-04-20 |
| Estabilización presencial E1, día 20, zona 2 | 2028-04-20 | 2028-04-20 |
| Estabilización presencial E1, día 21, zona 1 | 2028-04-21 | 2028-04-21 |
| Estabilización presencial E1, día 21, zona 2 | 2028-04-21 | 2028-04-21 |
| Estabilización presencial E1, día 22, zona 1 | 2028-04-22 | 2028-04-22 |
| Estabilización presencial E1, día 22, zona 2 | 2028-04-22 | 2028-04-22 |

| Task | Start | Finish |
| --- | --- | --- |
| Estabilización presencial E1, día 23, zona 1 | 2028-04-23 | 2028-04-23 |
| Estabilización presencial E1, día 23, zona 2 | 2028-04-23 | 2028-04-23 |
| Estabilización presencial E1, día 24, zona 1 | 2028-04-24 | 2028-04-24 |
| Estabilización presencial E1, día 24, zona 2 | 2028-04-24 | 2028-04-24 |
| Estabilización presencial E1, día 25, zona 1 | 2028-04-25 | 2028-04-25 |
| Estabilización presencial E1, día 25, zona 2 | 2028-04-25 | 2028-04-25 |
| Estabilización presencial E1, día 26, zona 1 | 2028-04-26 | 2028-04-26 |
| Estabilización presencial E1, día 26, zona 2 | 2028-04-26 | 2028-04-26 |
| Estabilización presencial E1, día 27, zona 1 | 2028-04-27 | 2028-04-27 |
| Estabilización presencial E1, día 27, zona 2 | 2028-04-27 | 2028-04-27 |
| Estabilización presencial E1, día 28, zona 1 | 2028-04-28 | 2028-04-28 |
| Estabilización presencial E1, día 28, zona 2 | 2028-04-28 | 2028-04-28 |
| Sesión y certificación E2, perfil 1, cohorte 1 | 2028-04-20 | 2028-04-21 |
| Sesión y certificación E2, perfil 1, cohorte 2 | 2028-04-24 | 2028-04-25 |
| Sesión y certificación E2, perfil 1, cohorte 3 | 2028-04-25 | 2028-04-27 |
| Sesión y certificación E2, perfil 1, cohorte 4 | 2028-04-26 | 2028-04-28 |
| Sesión y certificación E2, perfil 1, cohorte 5 | 2028-04-20 | 2028-04-21 |
| Sesión y certificación E2, perfil 1, cohorte 6 | 2028-04-27 | 2028-05-02 |
| Sesión y certificación E2, perfil 1, cohorte 7 | 2028-05-03 | 2028-05-04 |
| Sesión y certificación E2, perfil 1, cohorte 8 | 2028-05-03 | 2028-05-04 |
| Sesión y certificación E2, perfil 1, cohorte 9 | 2028-05-02 | 2028-05-03 |
| Sesión y certificación E2, perfil 1, cohorte 10 | 2028-04-20 | 2028-04-21 |
| Sesión y certificación E2, perfil 1, cohorte 11 | 2028-04-24 | 2028-04-25 |
| Sesión y certificación E2, perfil 1, cohorte 12 | 2028-04-25 | 2028-04-27 |
| Sesión y certificación E2, perfil 1, cohorte 13 | 2028-04-26 | 2028-04-28 |
| Sesión y certificación E2, perfil 1, cohorte 14 | 2028-04-27 | 2028-05-02 |
| Sesión y certificación E2, perfil 1, cohorte 15 | 2028-05-02 | 2028-05-03 |
| Sesión y certificación E2, perfil 1, cohorte 16 | 2028-05-03 | 2028-05-04 |
| Sesión y certificación E2, perfil 1, cohorte 17 | 2028-05-04 | 2028-05-05 |
| Sesión y certificación E2, perfil 1, cohorte 18 | 2028-04-20 | 2028-04-21 |
| Sesión y certificación E2, perfil 1, cohorte 19 | 2028-04-21 | 2028-04-24 |
| Sesión y certificación E2, perfil 1, cohorte 20 | 2028-04-25 | 2028-04-27 |
| Sesión y certificación E2, perfil 1, cohorte 21 | 2028-04-26 | 2028-04-28 |
| Sesión y certificación E2, perfil 1, cohorte 22 | 2028-04-28 | 2028-05-02 |
| Sesión y certificación E2, perfil 1, cohorte 23 | 2028-04-20 | 2028-04-21 |
| Sesión y certificación E2, perfil 1, cohorte 24 | 2028-04-21 | 2028-04-24 |
| Sesión y certificación E2, perfil 1, cohorte 25 | 2028-04-24 | 2028-04-25 |
| Sesión y certificación E2, perfil 1, cohorte 26 | 2028-04-25 | 2028-04-27 |
| Sesión y certificación E2, perfil 1, cohorte 27 | 2028-04-26 | 2028-04-28 |
| Sesión y certificación E2, perfil 1, cohorte 28 | 2028-04-21 | 2028-04-24 |
| Sesión y certificación E2, perfil 1, cohorte 29 | 2028-04-24 | 2028-04-25 |
| Sesión y certificación E2, perfil 1, cohorte 30 | 2028-04-26 | 2028-04-28 |
| Sesión y certificación E2, perfil 1, cohorte 31 | 2028-04-20 | 2028-04-21 |
| Sesión y certificación E2, perfil 1, cohorte 32 | 2028-04-21 | 2028-04-24 |
| Sesión y certificación E2, perfil 1, cohorte 33 | 2028-04-24 | 2028-04-25 |
| Sesión y certificación E2, perfil 1, cohorte 34 | 2028-04-25 | 2028-04-27 |
| Sesión y certificación E2, perfil 1, cohorte 35 | 2028-04-26 | 2028-04-28 |
| Sesión y certificación E2, perfil 1, cohorte 36 | 2028-04-20 | 2028-04-21 |
| Sesión y certificación E2, perfil 1, cohorte 37 | 2028-04-21 | 2028-04-24 |
| Sesión y certificación E2, perfil 1, cohorte 38 | 2028-04-24 | 2028-04-25 |
| Sesión y certificación E2, perfil 1, cohorte 39 | 2028-04-25 | 2028-04-27 |
| Sesión y certificación E2, perfil 1, cohorte 40 | 2028-04-20 | 2028-04-21 |
| Sesión y certificación E2, perfil 1, cohorte 41 | 2028-04-21 | 2028-04-24 |
| Sesión y certificación E2, perfil 1, cohorte 42 | 2028-04-24 | 2028-04-25 |
| Sesión y certificación E2, perfil 1, cohorte 43 | 2028-04-25 | 2028-04-27 |
| Sesión y certificación E2, perfil 1, cohorte 44 | 2028-04-26 | 2028-04-28 |
| Sesión y certificación E2, perfil 1, cohorte 45 | 2028-04-20 | 2028-04-21 |
| Sesión y certificación E2, perfil 1, cohorte 46 | 2028-04-21 | 2028-04-24 |
| Sesión y certificación E2, perfil 1, cohorte 47 | 2028-04-24 | 2028-04-25 |
| Sesión y certificación E2, perfil 1, cohorte 48 | 2028-04-25 | 2028-04-27 |
| Sesión y certificación E2, perfil 1, cohorte 49 | 2028-04-26 | 2028-04-28 |
| Sesión y certificación E2, perfil 1, cohorte 50 | 2028-04-21 | 2028-04-24 |
| Sesión y certificación E2, perfil 1, cohorte 51 | 2028-04-24 | 2028-04-25 |
| Sesión y certificación E2, perfil 1, cohorte 52 | 2028-04-25 | 2028-04-27 |
| Sesión y certificación E2, perfil 1, cohorte 53 | 2028-04-26 | 2028-04-28 |
| Sesión y certificación E2, perfil 1, cohorte 54 | 2028-04-20 | 2028-04-21 |
| Sesión y certificación E2, perfil 1, cohorte 55 | 2028-04-21 | 2028-04-24 |
| Sesión y certificación E2, perfil 1, cohorte 56 | 2028-04-24 | 2028-04-25 |
| Sesión y certificación E2, perfil 1, cohorte 57 | 2028-04-25 | 2028-04-27 |
| Sesión y certificación E2, perfil 1, cohorte 58 | 2028-04-26 | 2028-04-28 |

| Task | Start | Finish |
| --- | --- | --- |
| Sesión y certificación E2, perfil 1, cohorte 59 | 2028-04-20 | 2028-04-21 |
| Sesión y certificación E2, perfil 1, cohorte 60 | 2028-04-28 | 2028-05-02 |
| Sesión y certificación E2, perfil 1, cohorte 61 | 2028-04-27 | 2028-05-02 |
| Sesión y certificación E2, perfil 1, cohorte 62 | 2028-04-28 | 2028-05-02 |
| Sesión y certificación E2, perfil 1, cohorte 63 | 2028-04-27 | 2028-05-02 |
| Sesión y certificación E2, perfil 1, cohorte 64 | 2028-04-28 | 2028-05-02 |
| Sesión y certificación E2, perfil 1, cohorte 65 | 2028-04-27 | 2028-05-02 |
| Sesión y certificación E2, perfil 1, cohorte 66 | 2028-04-28 | 2028-05-02 |
| Sesión y certificación E2, perfil 1, cohorte 67 | 2028-05-02 | 2028-05-03 |
| Sesión y certificación E2, perfil 1, cohorte 68 | 2028-05-02 | 2028-05-03 |
| Sesión y certificación E2, perfil 1, cohorte 69 | 2028-05-03 | 2028-05-04 |
| Sesión y certificación E2, perfil 1, cohorte 70 | 2028-05-04 | 2028-05-05 |
| Sesión y certificación E2, perfil 1, cohorte 71 | 2028-05-04 | 2028-05-05 |
| Sesión y certificación E2, perfil 1, cohorte 72 | 2028-05-05 | 2028-05-08 |
| Sesión y certificación E2, perfil 1, cohorte 73 | 2028-05-05 | 2028-05-08 |
| Sesión y certificación E2, perfil 1, cohorte 74 | 2028-05-08 | 2028-05-09 |
| Sesión y certificación E2, perfil 1, cohorte 75 | 2028-05-08 | 2028-05-10 |
| Sesión y certificación E2, perfil 1, cohorte 76 | 2028-05-09 | 2028-05-10 |
| Sesión y certificación E2, perfil 1, cohorte 77 | 2028-05-09 | 2028-05-11 |
| Sesión y certificación E2, perfil 1, cohorte 78 | 2028-05-02 | 2028-05-03 |
| Sesión y certificación E2, perfil 1, cohorte 79 | 2028-05-02 | 2028-05-03 |
| Sesión y certificación E2, perfil 1, cohorte 80 | 2028-05-03 | 2028-05-04 |
| Sesión y certificación E2, perfil 1, cohorte 81 | 2028-05-04 | 2028-05-05 |
| Sesión y certificación E2, perfil 1, cohorte 82 | 2028-05-04 | 2028-05-05 |
| Sesión y certificación E2, perfil 1, cohorte 83 | 2028-05-05 | 2028-05-08 |
| Sesión y certificación E2, perfil 1, cohorte 84 | 2028-05-05 | 2028-05-08 |
| Sesión y certificación E2, perfil 1, cohorte 85 | 2028-05-08 | 2028-05-09 |
| Sesión y certificación E2, perfil 1, cohorte 86 | 2028-05-08 | 2028-05-10 |
| Sesión y certificación E2, perfil 1, cohorte 87 | 2028-05-09 | 2028-05-10 |
| Sesión y certificación E2, perfil 1, cohorte 88 | 2028-05-09 | 2028-05-11 |
| Sesión y certificación E2, perfil 1, cohorte 89 | 2028-05-02 | 2028-05-03 |
| Sesión y certificación E2, perfil 1, cohorte 90 | 2028-05-03 | 2028-05-04 |
| Sesión y certificación E2, perfil 1, cohorte 91 | 2028-05-03 | 2028-05-04 |
| Sesión y certificación E2, perfil 1, cohorte 92 | 2028-05-04 | 2028-05-05 |
| Sesión y certificación E2, perfil 1, cohorte 93 | 2028-05-04 | 2028-05-05 |
| Sesión y certificación E2, perfil 1, cohorte 94 | 2028-05-05 | 2028-05-08 |
| Sesión y certificación E2, perfil 1, cohorte 95 | 2028-05-05 | 2028-05-08 |
| Sesión y certificación E2, perfil 1, cohorte 96 | 2028-05-08 | 2028-05-09 |
| Sesión y certificación E2, perfil 1, cohorte 97 | 2028-05-08 | 2028-05-10 |
| Sesión y certificación E2, perfil 1, cohorte 98 | 2028-05-09 | 2028-05-10 |
| Sesión y certificación E2, perfil 1, cohorte 99 | 2028-05-09 | 2028-05-11 |
| Sesión y certificación E2, perfil 1, cohorte 100 | 2028-04-21 | 2028-04-24 |
| Sesión y certificación E2, perfil 2, cohorte 1 | 2028-04-21 | 2028-04-24 |
| Sesión y certificación E2, perfil 2, cohorte 2 | 2028-04-24 | 2028-04-25 |
| Sesión y certificación E2, perfil 3, cohorte 1 | 2028-05-02 | 2028-05-03 |
| Sesión y certificación E2, perfil 4, cohorte 1 | 2028-04-21 | 2028-04-24 |
| Sesión y certificación E2, perfil 5, cohorte 1 | 2028-04-24 | 2028-04-25 |
| Sesión y certificación E2, perfil 5, cohorte 2 | 2028-05-02 | 2028-05-03 |
| Sesión y certificación E2, perfil 5, cohorte 3 | 2028-05-03 | 2028-05-04 |
| Acompañamiento E2, ola 1, día 1, zona 1 | 2028-06-01 | 2028-06-01 |
| Acompañamiento E2, ola 1, día 1, zona 2 | 2028-06-01 | 2028-06-01 |
| Acompañamiento E2, ola 1, día 2, zona 1 | 2028-06-02 | 2028-06-02 |
| Acompañamiento E2, ola 1, día 2, zona 2 | 2028-06-02 | 2028-06-02 |
| Acompañamiento E2, ola 1, día 3, zona 1 | 2028-06-03 | 2028-06-03 |
| Acompañamiento E2, ola 1, día 3, zona 2 | 2028-06-03 | 2028-06-03 |
| Acompañamiento E2, ola 1, día 4, zona 1 | 2028-06-04 | 2028-06-04 |
| Acompañamiento E2, ola 1, día 4, zona 2 | 2028-06-04 | 2028-06-04 |
| Acompañamiento E2, ola 1, día 5, zona 1 | 2028-06-05 | 2028-06-05 |
| Acompañamiento E2, ola 1, día 5, zona 2 | 2028-06-05 | 2028-06-05 |
| Acompañamiento E2, ola 1, día 6, zona 1 | 2028-06-06 | 2028-06-06 |
| Acompañamiento E2, ola 1, día 6, zona 2 | 2028-06-06 | 2028-06-06 |
| Acompañamiento E2, ola 1, día 7, zona 1 | 2028-06-07 | 2028-06-07 |
| Acompañamiento E2, ola 1, día 7, zona 2 | 2028-06-07 | 2028-06-07 |
| Acompañamiento E2, ola 1, día 8, zona 1 | 2028-06-08 | 2028-06-08 |
| Acompañamiento E2, ola 1, día 8, zona 2 | 2028-06-08 | 2028-06-08 |
| Acompañamiento E2, ola 1, día 9, zona 1 | 2028-06-09 | 2028-06-09 |
| Acompañamiento E2, ola 1, día 9, zona 2 | 2028-06-09 | 2028-06-09 |
| Acompañamiento E2, ola 1, día 10, zona 1 | 2028-06-10 | 2028-06-10 |
| Acompañamiento E2, ola 1, día 10, zona 2 | 2028-06-10 | 2028-06-10 |
| Acompañamiento E2, ola 1, día 11, zona 1 | 2028-06-11 | 2028-06-11 |

| Task | Start | Finish |
| --- | --- | --- |
| Acompañamiento E2, ola 1, día 11, zona 2 | 2028-06-11 | 2028-06-11 |
| Acompañamiento E2, ola 1, día 12, zona 1 | 2028-06-12 | 2028-06-12 |
| Acompañamiento E2, ola 1, día 12, zona 2 | 2028-06-12 | 2028-06-12 |
| Acompañamiento E2, ola 1, día 13, zona 1 | 2028-06-13 | 2028-06-13 |
| Acompañamiento E2, ola 1, día 13, zona 2 | 2028-06-13 | 2028-06-13 |
| Acompañamiento E2, ola 1, día 14, zona 1 | 2028-06-14 | 2028-06-14 |
| Acompañamiento E2, ola 1, día 14, zona 2 | 2028-06-14 | 2028-06-14 |
| Acompañamiento E2, ola 1, día 15, zona 1 | 2028-06-15 | 2028-06-15 |
| Acompañamiento E2, ola 1, día 15, zona 2 | 2028-06-15 | 2028-06-15 |
| Acompañamiento E2, ola 1, día 16, zona 1 | 2028-06-16 | 2028-06-16 |
| Acompañamiento E2, ola 1, día 16, zona 2 | 2028-06-16 | 2028-06-16 |
| Acompañamiento E2, ola 1, día 17, zona 1 | 2028-06-17 | 2028-06-17 |
| Acompañamiento E2, ola 1, día 17, zona 2 | 2028-06-17 | 2028-06-17 |
| Acompañamiento E2, ola 1, día 18, zona 1 | 2028-06-18 | 2028-06-18 |
| Acompañamiento E2, ola 1, día 18, zona 2 | 2028-06-18 | 2028-06-18 |
| Acompañamiento E2, ola 1, día 19, zona 1 | 2028-06-19 | 2028-06-19 |
| Acompañamiento E2, ola 1, día 19, zona 2 | 2028-06-19 | 2028-06-19 |
| Acompañamiento E2, ola 1, día 20, zona 1 | 2028-06-20 | 2028-06-20 |
| Acompañamiento E2, ola 1, día 20, zona 2 | 2028-06-20 | 2028-06-20 |
| Acompañamiento E2, ola 1, día 21, zona 1 | 2028-06-21 | 2028-06-21 |
| Acompañamiento E2, ola 1, día 21, zona 2 | 2028-06-21 | 2028-06-21 |
| Acompañamiento E2, ola 1, día 22, zona 1 | 2028-06-22 | 2028-06-22 |
| Acompañamiento E2, ola 1, día 22, zona 2 | 2028-06-22 | 2028-06-22 |
| Acompañamiento E2, ola 1, día 23, zona 1 | 2028-06-23 | 2028-06-23 |
| Acompañamiento E2, ola 1, día 23, zona 2 | 2028-06-23 | 2028-06-23 |
| Acompañamiento E2, ola 1, día 24, zona 1 | 2028-06-24 | 2028-06-24 |
| Acompañamiento E2, ola 1, día 24, zona 2 | 2028-06-24 | 2028-06-24 |
| Acompañamiento E2, ola 1, día 25, zona 1 | 2028-06-25 | 2028-06-25 |
| Acompañamiento E2, ola 1, día 25, zona 2 | 2028-06-25 | 2028-06-25 |
| Acompañamiento E2, ola 1, día 26, zona 1 | 2028-06-26 | 2028-06-26 |
| Acompañamiento E2, ola 1, día 26, zona 2 | 2028-06-26 | 2028-06-26 |
| Acompañamiento E2, ola 1, día 27, zona 1 | 2028-06-27 | 2028-06-27 |
| Acompañamiento E2, ola 1, día 27, zona 2 | 2028-06-27 | 2028-06-27 |
| Acompañamiento E2, ola 1, día 28, zona 1 | 2028-06-28 | 2028-06-28 |
| Acompañamiento E2, ola 1, día 28, zona 2 | 2028-06-28 | 2028-06-28 |
| Acompañamiento E2, ola 2, día 1, zona 1 | 2028-06-01 | 2028-06-01 |
| Acompañamiento E2, ola 2, día 1, zona 2 | 2028-06-01 | 2028-06-01 |
| Acompañamiento E2, ola 2, día 2, zona 1 | 2028-06-02 | 2028-06-02 |
| Acompañamiento E2, ola 2, día 2, zona 2 | 2028-06-02 | 2028-06-02 |
| Acompañamiento E2, ola 2, día 3, zona 1 | 2028-06-03 | 2028-06-03 |
| Acompañamiento E2, ola 2, día 3, zona 2 | 2028-06-03 | 2028-06-03 |
| Acompañamiento E2, ola 2, día 4, zona 1 | 2028-06-04 | 2028-06-04 |
| Acompañamiento E2, ola 2, día 4, zona 2 | 2028-06-04 | 2028-06-04 |
| Acompañamiento E2, ola 2, día 5, zona 1 | 2028-06-05 | 2028-06-05 |
| Acompañamiento E2, ola 2, día 5, zona 2 | 2028-06-05 | 2028-06-05 |
| Acompañamiento E2, ola 2, día 6, zona 1 | 2028-06-06 | 2028-06-06 |
| Acompañamiento E2, ola 2, día 6, zona 2 | 2028-06-06 | 2028-06-06 |
| Acompañamiento E2, ola 2, día 7, zona 1 | 2028-06-07 | 2028-06-07 |
| Acompañamiento E2, ola 2, día 7, zona 2 | 2028-06-07 | 2028-06-07 |
| Acompañamiento E2, ola 2, día 8, zona 1 | 2028-06-08 | 2028-06-08 |
| Acompañamiento E2, ola 2, día 8, zona 2 | 2028-06-08 | 2028-06-08 |
| Acompañamiento E2, ola 2, día 9, zona 1 | 2028-06-09 | 2028-06-09 |
| Acompañamiento E2, ola 2, día 9, zona 2 | 2028-06-09 | 2028-06-09 |
| Acompañamiento E2, ola 2, día 10, zona 1 | 2028-06-10 | 2028-06-10 |
| Acompañamiento E2, ola 2, día 10, zona 2 | 2028-06-10 | 2028-06-10 |
| Acompañamiento E2, ola 2, día 11, zona 1 | 2028-06-11 | 2028-06-11 |
| Acompañamiento E2, ola 2, día 11, zona 2 | 2028-06-11 | 2028-06-11 |
| Acompañamiento E2, ola 2, día 12, zona 1 | 2028-06-12 | 2028-06-12 |
| Acompañamiento E2, ola 2, día 12, zona 2 | 2028-06-12 | 2028-06-12 |
| Acompañamiento E2, ola 2, día 13, zona 1 | 2028-06-13 | 2028-06-13 |
| Acompañamiento E2, ola 2, día 13, zona 2 | 2028-06-13 | 2028-06-13 |
| Acompañamiento E2, ola 2, día 14, zona 1 | 2028-06-14 | 2028-06-14 |
| Acompañamiento E2, ola 2, día 14, zona 2 | 2028-06-14 | 2028-06-14 |
| Acompañamiento E2, ola 2, día 15, zona 1 | 2028-06-15 | 2028-06-15 |
| Acompañamiento E2, ola 2, día 15, zona 2 | 2028-06-15 | 2028-06-15 |
| Acompañamiento E2, ola 2, día 16, zona 1 | 2028-06-16 | 2028-06-16 |
| Acompañamiento E2, ola 2, día 16, zona 2 | 2028-06-16 | 2028-06-16 |
| Acompañamiento E2, ola 2, día 17, zona 1 | 2028-06-17 | 2028-06-17 |
| Acompañamiento E2, ola 2, día 17, zona 2 | 2028-06-17 | 2028-06-17 |
| Acompañamiento E2, ola 2, día 18, zona 1 | 2028-06-18 | 2028-06-18 |

| Task | Start | Finish |
| --- | --- | --- |
| Acompañamiento E2, ola 2, día 18, zona 2 | 2028-06-18 | 2028-06-18 |
| Acompañamiento E2, ola 2, día 19, zona 1 | 2028-06-19 | 2028-06-19 |
| Acompañamiento E2, ola 2, día 19, zona 2 | 2028-06-19 | 2028-06-19 |
| Acompañamiento E2, ola 2, día 20, zona 1 | 2028-06-20 | 2028-06-20 |
| Acompañamiento E2, ola 2, día 20, zona 2 | 2028-06-20 | 2028-06-20 |
| Acompañamiento E2, ola 2, día 21, zona 1 | 2028-06-21 | 2028-06-21 |
| Acompañamiento E2, ola 2, día 21, zona 2 | 2028-06-21 | 2028-06-21 |
| Acompañamiento E2, ola 2, día 22, zona 1 | 2028-06-22 | 2028-06-22 |
| Acompañamiento E2, ola 2, día 22, zona 2 | 2028-06-22 | 2028-06-22 |
| Acompañamiento E2, ola 2, día 23, zona 1 | 2028-06-23 | 2028-06-23 |
| Acompañamiento E2, ola 2, día 23, zona 2 | 2028-06-23 | 2028-06-23 |
| Acompañamiento E2, ola 2, día 24, zona 1 | 2028-06-24 | 2028-06-24 |
| Acompañamiento E2, ola 2, día 24, zona 2 | 2028-06-24 | 2028-06-24 |
| Acompañamiento E2, ola 2, día 25, zona 1 | 2028-06-25 | 2028-06-25 |
| Acompañamiento E2, ola 2, día 25, zona 2 | 2028-06-25 | 2028-06-25 |
| Acompañamiento E2, ola 2, día 26, zona 1 | 2028-06-26 | 2028-06-26 |
| Acompañamiento E2, ola 2, día 26, zona 2 | 2028-06-26 | 2028-06-26 |
| Acompañamiento E2, ola 2, día 27, zona 1 | 2028-06-27 | 2028-06-27 |
| Acompañamiento E2, ola 2, día 27, zona 2 | 2028-06-27 | 2028-06-27 |
| Acompañamiento E2, ola 2, día 28, zona 1 | 2028-06-28 | 2028-06-28 |
| Acompañamiento E2, ola 2, día 28, zona 2 | 2028-06-28 | 2028-06-28 |
| Acompañamiento E2, ola 3, día 1, zona 1 | 2028-06-01 | 2028-06-01 |
| Acompañamiento E2, ola 3, día 1, zona 2 | 2028-06-01 | 2028-06-01 |
| Acompañamiento E2, ola 3, día 2, zona 1 | 2028-06-02 | 2028-06-02 |
| Acompañamiento E2, ola 3, día 2, zona 2 | 2028-06-02 | 2028-06-02 |
| Acompañamiento E2, ola 3, día 3, zona 1 | 2028-06-03 | 2028-06-03 |
| Acompañamiento E2, ola 3, día 3, zona 2 | 2028-06-03 | 2028-06-03 |
| Acompañamiento E2, ola 3, día 4, zona 1 | 2028-06-04 | 2028-06-04 |
| Acompañamiento E2, ola 3, día 4, zona 2 | 2028-06-04 | 2028-06-04 |
| Acompañamiento E2, ola 3, día 5, zona 1 | 2028-06-05 | 2028-06-05 |
| Acompañamiento E2, ola 3, día 5, zona 2 | 2028-06-05 | 2028-06-05 |
| Acompañamiento E2, ola 3, día 6, zona 1 | 2028-06-06 | 2028-06-06 |
| Acompañamiento E2, ola 3, día 6, zona 2 | 2028-06-06 | 2028-06-06 |
| Acompañamiento E2, ola 3, día 7, zona 1 | 2028-06-07 | 2028-06-07 |
| Acompañamiento E2, ola 3, día 7, zona 2 | 2028-06-07 | 2028-06-07 |
| Acompañamiento E2, ola 3, día 8, zona 1 | 2028-06-08 | 2028-06-08 |
| Acompañamiento E2, ola 3, día 8, zona 2 | 2028-06-08 | 2028-06-08 |
| Acompañamiento E2, ola 3, día 9, zona 1 | 2028-06-09 | 2028-06-09 |
| Acompañamiento E2, ola 3, día 9, zona 2 | 2028-06-09 | 2028-06-09 |
| Acompañamiento E2, ola 3, día 10, zona 1 | 2028-06-10 | 2028-06-10 |
| Acompañamiento E2, ola 3, día 10, zona 2 | 2028-06-10 | 2028-06-10 |
| Acompañamiento E2, ola 3, día 11, zona 1 | 2028-06-11 | 2028-06-11 |
| Acompañamiento E2, ola 3, día 11, zona 2 | 2028-06-11 | 2028-06-11 |
| Acompañamiento E2, ola 3, día 12, zona 1 | 2028-06-12 | 2028-06-12 |
| Acompañamiento E2, ola 3, día 12, zona 2 | 2028-06-12 | 2028-06-12 |
| Acompañamiento E2, ola 3, día 13, zona 1 | 2028-06-13 | 2028-06-13 |
| Acompañamiento E2, ola 3, día 13, zona 2 | 2028-06-13 | 2028-06-13 |
| Acompañamiento E2, ola 3, día 14, zona 1 | 2028-06-14 | 2028-06-14 |
| Acompañamiento E2, ola 3, día 14, zona 2 | 2028-06-14 | 2028-06-14 |
| Acompañamiento E2, ola 3, día 15, zona 1 | 2028-06-15 | 2028-06-15 |
| Acompañamiento E2, ola 3, día 15, zona 2 | 2028-06-15 | 2028-06-15 |
| Acompañamiento E2, ola 3, día 16, zona 1 | 2028-06-16 | 2028-06-16 |
| Acompañamiento E2, ola 3, día 16, zona 2 | 2028-06-16 | 2028-06-16 |
| Acompañamiento E2, ola 3, día 17, zona 1 | 2028-06-17 | 2028-06-17 |
| Acompañamiento E2, ola 3, día 17, zona 2 | 2028-06-17 | 2028-06-17 |
| Acompañamiento E2, ola 3, día 18, zona 1 | 2028-06-18 | 2028-06-18 |
| Acompañamiento E2, ola 3, día 18, zona 2 | 2028-06-18 | 2028-06-18 |
| Acompañamiento E2, ola 3, día 19, zona 1 | 2028-06-19 | 2028-06-19 |
| Acompañamiento E2, ola 3, día 19, zona 2 | 2028-06-19 | 2028-06-19 |
| Acompañamiento E2, ola 3, día 20, zona 1 | 2028-06-20 | 2028-06-20 |
| Acompañamiento E2, ola 3, día 20, zona 2 | 2028-06-20 | 2028-06-20 |
| Acompañamiento E2, ola 3, día 21, zona 1 | 2028-06-21 | 2028-06-21 |
| Acompañamiento E2, ola 3, día 21, zona 2 | 2028-06-21 | 2028-06-21 |
| Acompañamiento E2, ola 3, día 22, zona 1 | 2028-06-22 | 2028-06-22 |
| Acompañamiento E2, ola 3, día 22, zona 2 | 2028-06-22 | 2028-06-22 |
| Acompañamiento E2, ola 3, día 23, zona 1 | 2028-06-23 | 2028-06-23 |
| Acompañamiento E2, ola 3, día 23, zona 2 | 2028-06-23 | 2028-06-23 |
| Acompañamiento E2, ola 3, día 24, zona 1 | 2028-06-24 | 2028-06-24 |
| Acompañamiento E2, ola 3, día 24, zona 2 | 2028-06-24 | 2028-06-24 |
| Acompañamiento E2, ola 3, día 25, zona 1 | 2028-06-25 | 2028-06-25 |

| Task | Start | Finish |
| --- | --- | --- |
| Acompañamiento E2, ola 3, día 25, zona 2 | 2028-06-25 | 2028-06-25 |
| Acompañamiento E2, ola 3, día 26, zona 1 | 2028-06-26 | 2028-06-26 |
| Acompañamiento E2, ola 3, día 26, zona 2 | 2028-06-26 | 2028-06-26 |
| Acompañamiento E2, ola 3, día 27, zona 1 | 2028-06-27 | 2028-06-27 |
| Acompañamiento E2, ola 3, día 27, zona 2 | 2028-06-27 | 2028-06-27 |
| Acompañamiento E2, ola 3, día 28, zona 1 | 2028-06-28 | 2028-06-28 |
| Acompañamiento E2, ola 3, día 28, zona 2 | 2028-06-28 | 2028-06-28 |
| Acompañamiento E2, ola 4, día 1, zona 1 | 2028-06-01 | 2028-06-01 |
| Acompañamiento E2, ola 4, día 1, zona 2 | 2028-06-01 | 2028-06-01 |
| Acompañamiento E2, ola 4, día 2, zona 1 | 2028-06-02 | 2028-06-02 |
| Acompañamiento E2, ola 4, día 2, zona 2 | 2028-06-02 | 2028-06-02 |
| Acompañamiento E2, ola 4, día 3, zona 1 | 2028-06-03 | 2028-06-03 |
| Acompañamiento E2, ola 4, día 3, zona 2 | 2028-06-03 | 2028-06-03 |
| Acompañamiento E2, ola 4, día 4, zona 1 | 2028-06-04 | 2028-06-04 |
| Acompañamiento E2, ola 4, día 4, zona 2 | 2028-06-04 | 2028-06-04 |
| Acompañamiento E2, ola 4, día 5, zona 1 | 2028-06-05 | 2028-06-05 |
| Acompañamiento E2, ola 4, día 5, zona 2 | 2028-06-05 | 2028-06-05 |
| Acompañamiento E2, ola 4, día 6, zona 1 | 2028-06-06 | 2028-06-06 |
| Acompañamiento E2, ola 4, día 6, zona 2 | 2028-06-06 | 2028-06-06 |
| Acompañamiento E2, ola 4, día 7, zona 1 | 2028-06-07 | 2028-06-07 |
| Acompañamiento E2, ola 4, día 7, zona 2 | 2028-06-07 | 2028-06-07 |
| Acompañamiento E2, ola 4, día 8, zona 1 | 2028-06-08 | 2028-06-08 |
| Acompañamiento E2, ola 4, día 8, zona 2 | 2028-06-08 | 2028-06-08 |
| Acompañamiento E2, ola 4, día 9, zona 1 | 2028-06-09 | 2028-06-09 |
| Acompañamiento E2, ola 4, día 9, zona 2 | 2028-06-09 | 2028-06-09 |
| Acompañamiento E2, ola 4, día 10, zona 1 | 2028-06-10 | 2028-06-10 |
| Acompañamiento E2, ola 4, día 10, zona 2 | 2028-06-10 | 2028-06-10 |
| Acompañamiento E2, ola 4, día 11, zona 1 | 2028-06-11 | 2028-06-11 |
| Acompañamiento E2, ola 4, día 11, zona 2 | 2028-06-11 | 2028-06-11 |
| Acompañamiento E2, ola 4, día 12, zona 1 | 2028-06-12 | 2028-06-12 |
| Acompañamiento E2, ola 4, día 12, zona 2 | 2028-06-12 | 2028-06-12 |
| Acompañamiento E2, ola 4, día 13, zona 1 | 2028-06-13 | 2028-06-13 |
| Acompañamiento E2, ola 4, día 13, zona 2 | 2028-06-13 | 2028-06-13 |
| Acompañamiento E2, ola 4, día 14, zona 1 | 2028-06-14 | 2028-06-14 |
| Acompañamiento E2, ola 4, día 14, zona 2 | 2028-06-14 | 2028-06-14 |
| Acompañamiento E2, ola 4, día 15, zona 1 | 2028-06-15 | 2028-06-15 |
| Acompañamiento E2, ola 4, día 15, zona 2 | 2028-06-15 | 2028-06-15 |
| Acompañamiento E2, ola 4, día 16, zona 1 | 2028-06-16 | 2028-06-16 |
| Acompañamiento E2, ola 4, día 16, zona 2 | 2028-06-16 | 2028-06-16 |
| Acompañamiento E2, ola 4, día 17, zona 1 | 2028-06-17 | 2028-06-17 |
| Acompañamiento E2, ola 4, día 17, zona 2 | 2028-06-17 | 2028-06-17 |
| Acompañamiento E2, ola 4, día 18, zona 1 | 2028-06-18 | 2028-06-18 |
| Acompañamiento E2, ola 4, día 18, zona 2 | 2028-06-18 | 2028-06-18 |
| Acompañamiento E2, ola 4, día 19, zona 1 | 2028-06-19 | 2028-06-19 |
| Acompañamiento E2, ola 4, día 19, zona 2 | 2028-06-19 | 2028-06-19 |
| Acompañamiento E2, ola 4, día 20, zona 1 | 2028-06-20 | 2028-06-20 |
| Acompañamiento E2, ola 4, día 20, zona 2 | 2028-06-20 | 2028-06-20 |
| Acompañamiento E2, ola 4, día 21, zona 1 | 2028-06-21 | 2028-06-21 |
| Acompañamiento E2, ola 4, día 21, zona 2 | 2028-06-21 | 2028-06-21 |
| Acompañamiento E2, ola 4, día 22, zona 1 | 2028-06-22 | 2028-06-22 |
| Acompañamiento E2, ola 4, día 22, zona 2 | 2028-06-22 | 2028-06-22 |
| Acompañamiento E2, ola 4, día 23, zona 1 | 2028-06-23 | 2028-06-23 |
| Acompañamiento E2, ola 4, día 23, zona 2 | 2028-06-23 | 2028-06-23 |
| Acompañamiento E2, ola 4, día 24, zona 1 | 2028-06-24 | 2028-06-24 |
| Acompañamiento E2, ola 4, día 24, zona 2 | 2028-06-24 | 2028-06-24 |
| Acompañamiento E2, ola 4, día 25, zona 1 | 2028-06-25 | 2028-06-25 |
| Acompañamiento E2, ola 4, día 25, zona 2 | 2028-06-25 | 2028-06-25 |
| Acompañamiento E2, ola 4, día 26, zona 1 | 2028-06-26 | 2028-06-26 |
| Acompañamiento E2, ola 4, día 26, zona 2 | 2028-06-26 | 2028-06-26 |
| Acompañamiento E2, ola 4, día 27, zona 1 | 2028-06-27 | 2028-06-27 |
| Acompañamiento E2, ola 4, día 27, zona 2 | 2028-06-27 | 2028-06-27 |
| Acompañamiento E2, ola 4, día 28, zona 1 | 2028-06-28 | 2028-06-28 |
| Acompañamiento E2, ola 4, día 28, zona 2 | 2028-06-28 | 2028-06-28 |
| Estabilización presencial E2, día 1, zona 1 | 2028-08-01 | 2028-08-01 |
| Estabilización presencial E2, día 1, zona 2 | 2028-08-01 | 2028-08-01 |
| Estabilización presencial E2, día 2, zona 1 | 2028-08-02 | 2028-08-02 |
| Estabilización presencial E2, día 2, zona 2 | 2028-08-02 | 2028-08-02 |
| Estabilización presencial E2, día 3, zona 1 | 2028-08-03 | 2028-08-03 |
| Estabilización presencial E2, día 3, zona 2 | 2028-08-03 | 2028-08-03 |
| Estabilización presencial E2, día 4, zona 1 | 2028-08-04 | 2028-08-04 |

| Task | Start | Finish |
| --- | --- | --- |
| Estabilización presencial E2, día 4, zona 2 | 2028-08-04 | 2028-08-04 |
| Estabilización presencial E2, día 5, zona 1 | 2028-08-05 | 2028-08-05 |
| Estabilización presencial E2, día 5, zona 2 | 2028-08-05 | 2028-08-05 |
| Estabilización presencial E2, día 6, zona 1 | 2028-08-06 | 2028-08-06 |
| Estabilización presencial E2, día 6, zona 2 | 2028-08-06 | 2028-08-06 |
| Estabilización presencial E2, día 7, zona 1 | 2028-08-07 | 2028-08-07 |
| Estabilización presencial E2, día 7, zona 2 | 2028-08-07 | 2028-08-07 |
| Estabilización presencial E2, día 8, zona 1 | 2028-08-08 | 2028-08-08 |
| Estabilización presencial E2, día 8, zona 2 | 2028-08-08 | 2028-08-08 |
| Estabilización presencial E2, día 9, zona 1 | 2028-08-09 | 2028-08-09 |
| Estabilización presencial E2, día 9, zona 2 | 2028-08-09 | 2028-08-09 |
| Estabilización presencial E2, día 10, zona 1 | 2028-08-10 | 2028-08-10 |
| Estabilización presencial E2, día 10, zona 2 | 2028-08-10 | 2028-08-10 |
| Estabilización presencial E2, día 11, zona 1 | 2028-08-11 | 2028-08-11 |
| Estabilización presencial E2, día 11, zona 2 | 2028-08-11 | 2028-08-11 |
| Estabilización presencial E2, día 12, zona 1 | 2028-08-12 | 2028-08-12 |
| Estabilización presencial E2, día 12, zona 2 | 2028-08-12 | 2028-08-12 |
| Estabilización presencial E2, día 13, zona 1 | 2028-08-13 | 2028-08-13 |
| Estabilización presencial E2, día 13, zona 2 | 2028-08-13 | 2028-08-13 |
| Estabilización presencial E2, día 14, zona 1 | 2028-08-14 | 2028-08-14 |
| Estabilización presencial E2, día 14, zona 2 | 2028-08-14 | 2028-08-14 |
| Estabilización presencial E2, día 15, zona 1 | 2028-08-15 | 2028-08-15 |
| Estabilización presencial E2, día 15, zona 2 | 2028-08-15 | 2028-08-15 |
| Estabilización presencial E2, día 16, zona 1 | 2028-08-16 | 2028-08-16 |
| Estabilización presencial E2, día 16, zona 2 | 2028-08-16 | 2028-08-16 |
| Estabilización presencial E2, día 17, zona 1 | 2028-08-17 | 2028-08-17 |
| Estabilización presencial E2, día 17, zona 2 | 2028-08-17 | 2028-08-17 |
| Estabilización presencial E2, día 18, zona 1 | 2028-08-18 | 2028-08-18 |
| Estabilización presencial E2, día 18, zona 2 | 2028-08-18 | 2028-08-18 |
| Estabilización presencial E2, día 19, zona 1 | 2028-08-19 | 2028-08-19 |
| Estabilización presencial E2, día 19, zona 2 | 2028-08-19 | 2028-08-19 |
| Estabilización presencial E2, día 20, zona 1 | 2028-08-20 | 2028-08-20 |
| Estabilización presencial E2, día 20, zona 2 | 2028-08-20 | 2028-08-20 |
| Estabilización presencial E2, día 21, zona 1 | 2028-08-21 | 2028-08-21 |
| Estabilización presencial E2, día 21, zona 2 | 2028-08-21 | 2028-08-21 |
| Estabilización presencial E2, día 22, zona 1 | 2028-08-22 | 2028-08-22 |
| Estabilización presencial E2, día 22, zona 2 | 2028-08-22 | 2028-08-22 |
| Estabilización presencial E2, día 23, zona 1 | 2028-08-23 | 2028-08-23 |
| Estabilización presencial E2, día 23, zona 2 | 2028-08-23 | 2028-08-23 |
| Estabilización presencial E2, día 24, zona 1 | 2028-08-24 | 2028-08-24 |
| Estabilización presencial E2, día 24, zona 2 | 2028-08-24 | 2028-08-24 |
| Estabilización presencial E2, día 25, zona 1 | 2028-08-25 | 2028-08-25 |
| Estabilización presencial E2, día 25, zona 2 | 2028-08-25 | 2028-08-25 |
| Estabilización presencial E2, día 26, zona 1 | 2028-08-26 | 2028-08-26 |
| Estabilización presencial E2, día 26, zona 2 | 2028-08-26 | 2028-08-26 |
| Estabilización presencial E2, día 27, zona 1 | 2028-08-27 | 2028-08-27 |
| Estabilización presencial E2, día 27, zona 2 | 2028-08-27 | 2028-08-27 |
| Estabilización presencial E2, día 28, zona 1 | 2028-08-28 | 2028-08-28 |
| Estabilización presencial E2, día 28, zona 2 | 2028-08-28 | 2028-08-28 |
| Incorporación estacional mes 24, perfil 1, cohorte 1 | 2028-11-02 | 2028-11-03 |
| Incorporación estacional mes 24, perfil 1, cohorte 2 | 2028-11-09 | 2028-11-13 |
| Incorporación estacional mes 24, perfil 1, cohorte 3 | 2028-11-10 | 2028-11-14 |
| Incorporación estacional mes 24, perfil 1, cohorte 4 | 2028-11-06 | 2028-11-08 |
| Incorporación estacional mes 24, perfil 1, cohorte 5 | 2028-11-07 | 2028-11-09 |
| Incorporación estacional mes 24, perfil 1, cohorte 6 | 2028-11-09 | 2028-11-10 |
| Incorporación estacional mes 24, perfil 1, cohorte 7 | 2028-11-10 | 2028-11-13 |
| Incorporación estacional mes 24, perfil 1, cohorte 8 | 2028-11-13 | 2028-11-14 |
| Incorporación estacional mes 24, perfil 1, cohorte 9 | 2028-11-14 | 2028-11-15 |
| Incorporación estacional mes 24, perfil 1, cohorte 10 | 2028-11-03 | 2028-11-06 |
| Incorporación estacional mes 24, perfil 1, cohorte 11 | 2028-11-06 | 2028-11-07 |
| Incorporación estacional mes 24, perfil 1, cohorte 12 | 2028-11-07 | 2028-11-08 |
| Incorporación estacional mes 24, perfil 1, cohorte 13 | 2028-11-08 | 2028-11-09 |
| Incorporación estacional mes 24, perfil 1, cohorte 14 | 2028-11-09 | 2028-11-10 |
| Incorporación estacional mes 24, perfil 1, cohorte 15 | 2028-11-03 | 2028-11-06 |
| Incorporación estacional mes 24, perfil 1, cohorte 16 | 2028-11-06 | 2028-11-07 |
| Incorporación estacional mes 24, perfil 1, cohorte 17 | 2028-11-07 | 2028-11-08 |
| Incorporación estacional mes 24, perfil 1, cohorte 18 | 2028-11-08 | 2028-11-10 |
| Incorporación estacional mes 24, perfil 2, cohorte 1 | 2028-11-15 | 2028-11-17 |
| Incorporación estacional mes 24, perfil 2, cohorte 2 | 2028-11-16 | 2028-11-20 |
| Incorporación estacional mes 24, perfil 3, cohorte 1 | 2028-11-17 | 2028-11-20 |

| Task | Start | Finish |
| --- | --- | --- |
| Incorporación estacional mes 24, perfil 4, cohorte 1 | 2028-11-17 | 2028-11-21 |
| Incorporación estacional mes 24, perfil 5, cohorte 1 | 2028-11-20 | 2028-11-21 |
| Incorporación estacional mes 24, perfil 5, cohorte 2 | 2028-11-20 | 2028-11-21 |
| Incorporación estacional mes 24, perfil 5, cohorte 3 | 2028-11-21 | 2028-11-22 |
| Incorporación estacional mes 36, perfil 1, cohorte 1 | 2029-11-05 | 2029-11-06 |
| Incorporación estacional mes 36, perfil 1, cohorte 2 | 2029-11-12 | 2029-11-14 |
| Incorporación estacional mes 36, perfil 1, cohorte 3 | 2029-11-13 | 2029-11-15 |
| Incorporación estacional mes 36, perfil 1, cohorte 4 | 2029-11-07 | 2029-11-09 |
| Incorporación estacional mes 36, perfil 1, cohorte 5 | 2029-11-08 | 2029-11-12 |
| Incorporación estacional mes 36, perfil 1, cohorte 6 | 2029-11-12 | 2029-11-13 |
| Incorporación estacional mes 36, perfil 1, cohorte 7 | 2029-11-13 | 2029-11-14 |
| Incorporación estacional mes 36, perfil 1, cohorte 8 | 2029-11-14 | 2029-11-15 |
| Incorporación estacional mes 36, perfil 1, cohorte 9 | 2029-11-15 | 2029-11-16 |
| Incorporación estacional mes 36, perfil 1, cohorte 10 | 2029-11-06 | 2029-11-07 |
| Incorporación estacional mes 36, perfil 1, cohorte 11 | 2029-11-07 | 2029-11-08 |
| Incorporación estacional mes 36, perfil 1, cohorte 12 | 2029-11-08 | 2029-11-09 |
| Incorporación estacional mes 36, perfil 1, cohorte 13 | 2029-11-09 | 2029-11-12 |
| Incorporación estacional mes 36, perfil 1, cohorte 14 | 2029-11-12 | 2029-11-13 |
| Incorporación estacional mes 36, perfil 1, cohorte 15 | 2029-11-06 | 2029-11-07 |
| Incorporación estacional mes 36, perfil 1, cohorte 16 | 2029-11-07 | 2029-11-08 |
| Incorporación estacional mes 36, perfil 1, cohorte 17 | 2029-11-08 | 2029-11-09 |
| Incorporación estacional mes 36, perfil 1, cohorte 18 | 2029-11-09 | 2029-11-13 |
| Incorporación estacional mes 36, perfil 2, cohorte 1 | 2029-11-16 | 2029-11-19 |
| Incorporación estacional mes 36, perfil 2, cohorte 2 | 2029-11-16 | 2029-11-20 |
| Incorporación estacional mes 36, perfil 3, cohorte 1 | 2029-11-19 | 2029-11-20 |
| Incorporación estacional mes 36, perfil 4, cohorte 1 | 2029-11-19 | 2029-11-21 |
| Incorporación estacional mes 36, perfil 5, cohorte 1 | 2029-11-20 | 2029-11-21 |
| Incorporación estacional mes 36, perfil 5, cohorte 2 | 2029-11-20 | 2029-11-22 |
| Incorporación estacional mes 36, perfil 5, cohorte 3 | 2029-11-20 | 2029-11-22 |
| Incorporación estacional mes 48, perfil 1, cohorte 1 | 2030-11-04 | 2030-11-05 |
| Incorporación estacional mes 48, perfil 1, cohorte 2 | 2030-11-11 | 2030-11-13 |
| Incorporación estacional mes 48, perfil 1, cohorte 3 | 2030-11-12 | 2030-11-14 |
| Incorporación estacional mes 48, perfil 1, cohorte 4 | 2030-11-06 | 2030-11-08 |
| Incorporación estacional mes 48, perfil 1, cohorte 5 | 2030-11-07 | 2030-11-11 |
| Incorporación estacional mes 48, perfil 1, cohorte 6 | 2030-11-11 | 2030-11-12 |
| Incorporación estacional mes 48, perfil 1, cohorte 7 | 2030-11-12 | 2030-11-13 |
| Incorporación estacional mes 48, perfil 1, cohorte 8 | 2030-11-13 | 2030-11-14 |
| Incorporación estacional mes 48, perfil 1, cohorte 9 | 2030-11-14 | 2030-11-15 |
| Incorporación estacional mes 48, perfil 1, cohorte 10 | 2030-11-05 | 2030-11-06 |
| Incorporación estacional mes 48, perfil 1, cohorte 11 | 2030-11-06 | 2030-11-07 |
| Incorporación estacional mes 48, perfil 1, cohorte 12 | 2030-11-07 | 2030-11-08 |
| Incorporación estacional mes 48, perfil 1, cohorte 13 | 2030-11-08 | 2030-11-11 |
| Incorporación estacional mes 48, perfil 1, cohorte 14 | 2030-11-11 | 2030-11-12 |
| Incorporación estacional mes 48, perfil 1, cohorte 15 | 2030-11-05 | 2030-11-06 |
| Incorporación estacional mes 48, perfil 1, cohorte 16 | 2030-11-06 | 2030-11-07 |
| Incorporación estacional mes 48, perfil 1, cohorte 17 | 2030-11-07 | 2030-11-08 |
| Incorporación estacional mes 48, perfil 1, cohorte 18 | 2030-11-08 | 2030-11-12 |
| Incorporación estacional mes 48, perfil 2, cohorte 1 | 2030-11-15 | 2030-11-19 |
| Incorporación estacional mes 48, perfil 2, cohorte 2 | 2030-11-18 | 2030-11-20 |
| Incorporación estacional mes 48, perfil 3, cohorte 1 | 2030-11-19 | 2030-11-20 |
| Incorporación estacional mes 48, perfil 4, cohorte 1 | 2030-11-19 | 2030-11-21 |
| Incorporación estacional mes 48, perfil 5, cohorte 1 | 2030-11-20 | 2030-11-21 |
| Incorporación estacional mes 48, perfil 5, cohorte 2 | 2030-11-20 | 2030-11-21 |
| Incorporación estacional mes 48, perfil 5, cohorte 3 | 2030-11-21 | 2030-11-22 |
| Capacidad reservada de ingeniería correctiva, mes 21 | 2028-08-18 | 2028-08-24 |
| Capacidad reservada de ingeniería normativa, mes 21 | 2028-08-18 | 2028-08-22 |
| Capacidad reservada de ingeniería evolutiva, mes 21 | 2028-08-16 | 2028-08-21 |
| Capacidad reservada de ingeniería deuda, mes 21 | 2028-08-16 | 2028-08-21 |
| Capacidad reservada de ingeniería correctiva, mes 22 | 2028-09-20 | 2028-09-26 |
| Capacidad reservada de ingeniería normativa, mes 22 | 2028-09-20 | 2028-09-22 |
| Capacidad reservada de ingeniería evolutiva, mes 22 | 2028-09-22 | 2028-09-27 |
| Capacidad reservada de ingeniería deuda, mes 22 | 2028-09-22 | 2028-09-27 |
| Capacidad reservada de ingeniería correctiva, mes 23 | 2028-10-16 | 2028-10-20 |
| Capacidad reservada de ingeniería normativa, mes 23 | 2028-10-16 | 2028-10-18 |
| Capacidad reservada de ingeniería evolutiva, mes 23 | 2028-10-18 | 2028-10-23 |
| Capacidad reservada de ingeniería deuda, mes 23 | 2028-10-18 | 2028-10-23 |
| Capacidad reservada de ingeniería correctiva, mes 24 | 2028-11-16 | 2028-11-22 |
| Capacidad reservada de ingeniería normativa, mes 24 | 2028-11-16 | 2028-11-20 |
| Capacidad reservada de ingeniería evolutiva, mes 24 | 2028-11-20 | 2028-11-23 |
| Capacidad reservada de ingeniería deuda, mes 24 | 2028-11-20 | 2028-11-23 |

| Task | Start | Finish |
| --- | --- | --- |
| Capacidad reservada de ingeniería correctiva, mes 25 | 2028-12-18 | 2028-12-22 |
| Capacidad reservada de ingeniería normativa, mes 25 | 2028-12-18 | 2028-12-20 |
| Capacidad reservada de ingeniería evolutiva, mes 25 | 2028-12-20 | 2028-12-26 |
| Capacidad reservada de ingeniería deuda, mes 25 | 2028-12-20 | 2028-12-26 |
| Capacidad reservada de ingeniería correctiva, mes 26 | 2029-01-16 | 2029-01-22 |
| Capacidad reservada de ingeniería normativa, mes 26 | 2029-01-16 | 2029-01-18 |
| Capacidad reservada de ingeniería evolutiva, mes 26 | 2029-01-18 | 2029-01-23 |
| Capacidad reservada de ingeniería deuda, mes 26 | 2029-01-18 | 2029-01-23 |
| Capacidad reservada de ingeniería correctiva, mes 27 | 2029-02-16 | 2029-02-22 |
| Capacidad reservada de ingeniería normativa, mes 27 | 2029-02-16 | 2029-02-20 |
| Capacidad reservada de ingeniería evolutiva, mes 27 | 2029-02-20 | 2029-02-23 |
| Capacidad reservada de ingeniería deuda, mes 27 | 2029-02-20 | 2029-02-23 |
| Capacidad reservada de ingeniería correctiva, mes 28 | 2029-03-16 | 2029-03-22 |
| Capacidad reservada de ingeniería normativa, mes 28 | 2029-03-16 | 2029-03-20 |
| Capacidad reservada de ingeniería evolutiva, mes 28 | 2029-03-20 | 2029-03-23 |
| Capacidad reservada de ingeniería deuda, mes 28 | 2029-03-20 | 2029-03-23 |
| Capacidad reservada de ingeniería correctiva, mes 29 | 2029-04-16 | 2029-04-20 |
| Capacidad reservada de ingeniería normativa, mes 29 | 2029-04-16 | 2029-04-18 |
| Capacidad reservada de ingeniería evolutiva, mes 29 | 2029-04-18 | 2029-04-23 |
| Capacidad reservada de ingeniería deuda, mes 29 | 2029-04-18 | 2029-04-23 |
| Capacidad reservada de ingeniería correctiva, mes 30 | 2029-05-16 | 2029-05-23 |
| Capacidad reservada de ingeniería normativa, mes 30 | 2029-05-16 | 2029-05-18 |
| Capacidad reservada de ingeniería evolutiva, mes 30 | 2029-05-18 | 2029-05-24 |
| Capacidad reservada de ingeniería deuda, mes 30 | 2029-05-18 | 2029-05-24 |
| Capacidad reservada de ingeniería correctiva, mes 31 | 2029-06-18 | 2029-06-25 |
| Capacidad reservada de ingeniería normativa, mes 31 | 2029-06-18 | 2029-06-21 |
| Capacidad reservada de ingeniería evolutiva, mes 31 | 2029-06-21 | 2029-06-26 |
| Capacidad reservada de ingeniería deuda, mes 31 | 2029-06-21 | 2029-06-26 |
| Capacidad reservada de ingeniería correctiva, mes 32 | 2029-07-17 | 2029-07-23 |
| Capacidad reservada de ingeniería normativa, mes 32 | 2029-07-17 | 2029-07-19 |
| Capacidad reservada de ingeniería evolutiva, mes 32 | 2029-07-19 | 2029-07-24 |
| Capacidad reservada de ingeniería deuda, mes 32 | 2029-07-19 | 2029-07-24 |
| Capacidad reservada de ingeniería correctiva, mes 33 | 2029-08-16 | 2029-08-22 |
| Capacidad reservada de ingeniería normativa, mes 33 | 2029-08-16 | 2029-08-20 |
| Capacidad reservada de ingeniería evolutiva, mes 33 | 2029-08-20 | 2029-08-23 |
| Capacidad reservada de ingeniería deuda, mes 33 | 2029-08-20 | 2029-08-23 |
| Capacidad reservada de ingeniería correctiva, mes 34 | 2029-09-20 | 2029-09-26 |
| Capacidad reservada de ingeniería normativa, mes 34 | 2029-09-20 | 2029-09-24 |
| Capacidad reservada de ingeniería evolutiva, mes 34 | 2029-09-24 | 2029-09-27 |
| Capacidad reservada de ingeniería deuda, mes 34 | 2029-09-24 | 2029-09-27 |
| Capacidad reservada de ingeniería correctiva, mes 35 | 2029-10-16 | 2029-10-22 |
| Capacidad reservada de ingeniería normativa, mes 35 | 2029-10-16 | 2029-10-18 |
| Capacidad reservada de ingeniería evolutiva, mes 35 | 2029-10-18 | 2029-10-23 |
| Capacidad reservada de ingeniería deuda, mes 35 | 2029-10-18 | 2029-10-23 |
| Capacidad reservada de ingeniería correctiva, mes 36 | 2029-11-16 | 2029-11-22 |
| Capacidad reservada de ingeniería normativa, mes 36 | 2029-11-16 | 2029-11-20 |
| Capacidad reservada de ingeniería evolutiva, mes 36 | 2029-11-20 | 2029-11-23 |
| Capacidad reservada de ingeniería deuda, mes 36 | 2029-11-20 | 2029-11-23 |
| Capacidad reservada de ingeniería correctiva, mes 37 | 2029-12-17 | 2029-12-21 |
| Capacidad reservada de ingeniería normativa, mes 37 | 2029-12-17 | 2029-12-19 |
| Capacidad reservada de ingeniería evolutiva, mes 37 | 2029-12-19 | 2029-12-24 |
| Capacidad reservada de ingeniería deuda, mes 37 | 2029-12-19 | 2029-12-24 |
| Capacidad reservada de ingeniería correctiva, mes 38 | 2030-01-16 | 2030-01-22 |
| Capacidad reservada de ingeniería normativa, mes 38 | 2030-01-16 | 2030-01-18 |
| Capacidad reservada de ingeniería evolutiva, mes 38 | 2030-01-18 | 2030-01-23 |
| Capacidad reservada de ingeniería deuda, mes 38 | 2030-01-18 | 2030-01-23 |
| Capacidad reservada de ingeniería correctiva, mes 39 | 2030-02-18 | 2030-02-22 |
| Capacidad reservada de ingeniería normativa, mes 39 | 2030-02-18 | 2030-02-20 |
| Capacidad reservada de ingeniería evolutiva, mes 39 | 2030-02-20 | 2030-02-25 |
| Capacidad reservada de ingeniería deuda, mes 39 | 2030-02-20 | 2030-02-25 |
| Capacidad reservada de ingeniería correctiva, mes 40 | 2030-03-18 | 2030-03-22 |
| Capacidad reservada de ingeniería normativa, mes 40 | 2030-03-18 | 2030-03-20 |
| Capacidad reservada de ingeniería evolutiva, mes 40 | 2030-03-20 | 2030-03-25 |
| Capacidad reservada de ingeniería deuda, mes 40 | 2030-03-20 | 2030-03-25 |
| Capacidad reservada de ingeniería correctiva, mes 41 | 2030-04-16 | 2030-04-23 |
| Capacidad reservada de ingeniería normativa, mes 41 | 2030-04-16 | 2030-04-18 |
| Capacidad reservada de ingeniería evolutiva, mes 41 | 2030-04-18 | 2030-04-24 |
| Capacidad reservada de ingeniería deuda, mes 41 | 2030-04-18 | 2030-04-24 |
| Capacidad reservada de ingeniería correctiva, mes 42 | 2030-05-16 | 2030-05-23 |
| Capacidad reservada de ingeniería normativa, mes 42 | 2030-05-16 | 2030-05-20 |

| Task | Start | Finish |
| --- | --- | --- |
| Capacidad reservada de ingeniería evolutiva, mes 42 | 2030-05-20 | 2030-05-24 |
| Capacidad reservada de ingeniería deuda, mes 42 | 2030-05-20 | 2030-05-24 |
| Capacidad reservada de ingeniería correctiva, mes 43 | 2030-06-17 | 2030-06-24 |
| Capacidad reservada de ingeniería normativa, mes 43 | 2030-06-17 | 2030-06-19 |
| Capacidad reservada de ingeniería evolutiva, mes 43 | 2030-06-19 | 2030-06-25 |
| Capacidad reservada de ingeniería deuda, mes 43 | 2030-06-19 | 2030-06-25 |
| Capacidad reservada de ingeniería correctiva, mes 44 | 2030-07-17 | 2030-07-23 |
| Capacidad reservada de ingeniería normativa, mes 44 | 2030-07-17 | 2030-07-19 |
| Capacidad reservada de ingeniería evolutiva, mes 44 | 2030-07-19 | 2030-07-24 |
| Capacidad reservada de ingeniería deuda, mes 44 | 2030-07-19 | 2030-07-24 |
| Capacidad reservada de ingeniería correctiva, mes 45 | 2030-08-16 | 2030-08-22 |
| Capacidad reservada de ingeniería normativa, mes 45 | 2030-08-16 | 2030-08-20 |
| Capacidad reservada de ingeniería evolutiva, mes 45 | 2030-08-20 | 2030-08-23 |
| Capacidad reservada de ingeniería deuda, mes 45 | 2030-08-20 | 2030-08-23 |
| Capacidad reservada de ingeniería correctiva, mes 46 | 2030-09-16 | 2030-09-25 |
| Capacidad reservada de ingeniería normativa, mes 46 | 2030-09-16 | 2030-09-23 |
| Capacidad reservada de ingeniería evolutiva, mes 46 | 2030-09-23 | 2030-09-26 |
| Capacidad reservada de ingeniería deuda, mes 46 | 2030-09-23 | 2030-09-26 |
| Capacidad reservada de ingeniería correctiva, mes 47 | 2030-10-16 | 2030-10-22 |
| Capacidad reservada de ingeniería normativa, mes 47 | 2030-10-16 | 2030-10-18 |
| Capacidad reservada de ingeniería evolutiva, mes 47 | 2030-10-18 | 2030-10-23 |
| Capacidad reservada de ingeniería deuda, mes 47 | 2030-10-18 | 2030-10-23 |
| Capacidad reservada de ingeniería correctiva, mes 48 | 2030-11-18 | 2030-11-22 |
| Capacidad reservada de ingeniería normativa, mes 48 | 2030-11-18 | 2030-11-20 |
| Capacidad reservada de ingeniería evolutiva, mes 48 | 2030-11-20 | 2030-11-25 |
| Capacidad reservada de ingeniería deuda, mes 48 | 2030-11-20 | 2030-11-25 |
| Capacidad reservada de ingeniería correctiva, mes 49 | 2030-12-16 | 2030-12-20 |
| Capacidad reservada de ingeniería normativa, mes 49 | 2030-12-16 | 2030-12-18 |
| Capacidad reservada de ingeniería evolutiva, mes 49 | 2030-12-18 | 2030-12-23 |
| Capacidad reservada de ingeniería deuda, mes 49 | 2030-12-18 | 2030-12-23 |
| Capacidad reservada de ingeniería correctiva, mes 50 | 2031-01-16 | 2031-01-22 |
| Capacidad reservada de ingeniería normativa, mes 50 | 2031-01-16 | 2031-01-20 |
| Capacidad reservada de ingeniería evolutiva, mes 50 | 2031-01-20 | 2031-01-23 |
| Capacidad reservada de ingeniería deuda, mes 50 | 2031-01-20 | 2031-01-23 |
| Capacidad reservada de ingeniería correctiva, mes 51 | 2031-02-17 | 2031-02-21 |
| Capacidad reservada de ingeniería normativa, mes 51 | 2031-02-17 | 2031-02-19 |
| Capacidad reservada de ingeniería evolutiva, mes 51 | 2031-02-19 | 2031-02-24 |
| Capacidad reservada de ingeniería deuda, mes 51 | 2031-02-19 | 2031-02-24 |
| Capacidad reservada de ingeniería correctiva, mes 52 | 2031-03-17 | 2031-03-21 |
| Capacidad reservada de ingeniería normativa, mes 52 | 2031-03-17 | 2031-03-19 |
| Capacidad reservada de ingeniería evolutiva, mes 52 | 2031-03-19 | 2031-03-24 |
| Capacidad reservada de ingeniería deuda, mes 52 | 2031-03-19 | 2031-03-24 |
| Capacidad reservada de ingeniería correctiva, mes 53 | 2031-04-16 | 2031-04-22 |
| Capacidad reservada de ingeniería normativa, mes 53 | 2031-04-16 | 2031-04-18 |
| Capacidad reservada de ingeniería evolutiva, mes 53 | 2031-04-18 | 2031-04-23 |
| Capacidad reservada de ingeniería deuda, mes 53 | 2031-04-18 | 2031-04-23 |
| Capacidad reservada de ingeniería correctiva, mes 54 | 2031-05-16 | 2031-05-23 |
| Capacidad reservada de ingeniería normativa, mes 54 | 2031-05-16 | 2031-05-20 |
| Capacidad reservada de ingeniería evolutiva, mes 54 | 2031-05-20 | 2031-05-26 |
| Capacidad reservada de ingeniería deuda, mes 54 | 2031-05-20 | 2031-05-26 |
| Capacidad reservada de ingeniería correctiva, mes 55 | 2031-06-16 | 2031-06-20 |
| Capacidad reservada de ingeniería normativa, mes 55 | 2031-06-16 | 2031-06-18 |
| Capacidad reservada de ingeniería evolutiva, mes 55 | 2031-06-18 | 2031-06-23 |
| Capacidad reservada de ingeniería deuda, mes 55 | 2031-06-18 | 2031-06-23 |
| Capacidad reservada de ingeniería correctiva, mes 56 | 2031-07-17 | 2031-07-23 |
| Capacidad reservada de ingeniería normativa, mes 56 | 2031-07-17 | 2031-07-21 |
| Capacidad reservada de ingeniería evolutiva, mes 56 | 2031-07-21 | 2031-07-24 |
| Capacidad reservada de ingeniería deuda, mes 56 | 2031-07-21 | 2031-07-24 |
| Seguimiento incremental IN2 mes 31 | 2029-06-18 | 2029-06-21 |
| Seguimiento incremental IN2 mes 32 | 2029-07-17 | 2029-07-19 |
| Seguimiento incremental IN2 mes 33 | 2029-08-16 | 2029-08-17 |
| Seguimiento incremental IN2 mes 34 | 2029-09-20 | 2029-09-24 |
| Seguimiento incremental IN2 mes 35 | 2029-10-16 | 2029-10-18 |
| Seguimiento incremental IN2 mes 36 | 2029-11-16 | 2029-11-19 |
| Seguimiento incremental IN2 mes 37 | 2029-12-17 | 2029-12-19 |
| Seguimiento incremental IN2 mes 38 | 2030-01-16 | 2030-01-18 |
| Seguimiento incremental IN2 mes 39 | 2030-02-18 | 2030-02-20 |
| Seguimiento incremental IN2 mes 40 | 2030-03-18 | 2030-03-20 |
| Seguimiento incremental IN2 mes 41 | 2030-04-16 | 2030-04-18 |
| Seguimiento incremental IN2 mes 42 | 2030-05-16 | 2030-05-20 |

| Task | Start | Finish |
| --- | --- | --- |
| Seguimiento incremental IN2 mes 43 | 2030-06-17 | 2030-06-19 |
| Seguimiento incremental IN2 mes 44 | 2030-07-17 | 2030-07-19 |
| Seguimiento incremental IN2 mes 45 | 2030-08-16 | 2030-08-19 |
| Seguimiento incremental IN2 mes 46 | 2030-09-16 | 2030-09-23 |
| Seguimiento incremental IN2 mes 47 | 2030-10-16 | 2030-10-18 |
| Seguimiento incremental IN2 mes 48 | 2030-11-18 | 2030-11-20 |
| Seguimiento incremental IN2 mes 49 | 2030-12-16 | 2030-12-18 |
| Seguimiento incremental IN2 mes 50 | 2031-01-16 | 2031-01-20 |
| Seguimiento incremental IN2 mes 51 | 2031-02-17 | 2031-02-19 |
| Seguimiento incremental IN2 mes 52 | 2031-03-17 | 2031-03-19 |
| Seguimiento incremental IN2 mes 53 | 2031-04-16 | 2031-04-18 |
| Seguimiento incremental IN2 mes 54 | 2031-05-16 | 2031-05-19 |
| Seguimiento incremental IN2 mes 55 | 2031-06-16 | 2031-06-18 |
| Seguimiento incremental IN2 mes 56 | 2031-07-17 | 2031-07-18 |
| Revisión previa a botadura, lote 1 de cuatro embarcaciones | 2029-08-02 | 2029-08-03 |
| Revisión previa a botadura, lote 2 de cuatro embarcaciones | 2029-08-01 | 2029-08-02 |
| Revisión previa a botadura, lote 3 de cuatro embarcaciones | 2029-09-04 | 2029-09-05 |
| Revisión previa a botadura, lote 4 de cuatro embarcaciones | 2029-09-05 | 2029-09-06 |
| Revisión previa a botadura, lote 5 de cuatro embarcaciones | 2029-10-02 | 2029-10-03 |
| Reserva de subsanación y reensayo E1, bloque 1 | 2027-09-09 | 2027-09-15 |
| Reserva de subsanación y reensayo E1, bloque 2 | 2027-09-13 | 2027-09-20 |
| Reserva de subsanación y reensayo E1, bloque 3 | 2027-10-25 | 2027-10-29 |
| Reserva de subsanación y reensayo E1, bloque 4 | 2027-10-27 | 2027-11-03 |
| Reserva de subsanación y reensayo E2, bloque 1 | 2028-02-21 | 2028-02-25 |
| Reserva de subsanación y reensayo E2, bloque 2 | 2028-02-24 | 2028-02-29 |
| Reserva de subsanación y reensayo E2, bloque 3 | 2028-04-03 | 2028-04-07 |
| Reserva de subsanación y reensayo E2, bloque 4 | 2028-04-06 | 2028-04-11 |
| Expediente transversal de alcance y contratos | 2027-01-05 | 2027-01-07 |
| Expediente transversal de seguridad y privacidad | 2027-02-04 | 2027-02-08 |
| Expediente transversal de IA y trazabilidad | 2027-02-03 | 2027-02-05 |
| Expediente transversal de licencias y soporte | 2027-02-01 | 2027-02-03 |
| Expediente transversal de custodia y propiedad | 2027-01-06 | 2027-01-08 |
| Expediente transversal de garantías y oferta económica | 2027-02-02 | 2027-02-04 |
| Validación final del expediente vivo de marcha blanca E1 | 2028-03-01 | 2028-03-01 |
| Control final del expediente y preparación del cierre natural E2 | 2028-07-31 | 2028-08-01 |
| Control de continuidad adicional 7: resiliencia | 2030-11-05 | 2030-11-11 |
| Control de continuidad adicional 7: DR real y retorno | 2030-11-07 | 2030-11-12 |
| Control de continuidad adicional 8: resiliencia | 2031-03-20 | 2031-03-27 |
| Control de continuidad adicional 8: DR real y retorno | 2031-03-20 | 2031-03-26 |
| Control de continuidad adicional 9: resiliencia | 2031-07-02 | 2031-07-08 |
| Control de continuidad adicional 9: DR real y retorno | 2031-07-04 | 2031-07-09 |
| Análisis de reglas, excepciones y protocolo: Movimientos de salida y regreso identificados — lote 1/1 | 2027-01-27 | 2027-01-28 |
| Diseño de datos y restricciones del núcleo: Movimientos de salida y regreso identificados — lote 1/1 | 2027-01-27 | 2027-01-29 |
| Diseño de contratos internos y composición: Movimientos de salida y regreso identificados — lote 1/2 | 2027-01-29 | 2027-02-01 |
| Diseño de contratos internos y composición: Movimientos de salida y regreso identificados — lote 2/2 | 2027-01-27 | 2027-01-29 |
| Construcción funcional y pruebas unitarias: Movimientos de salida y regreso identificados — lote 1/4 | 2027-07-21 | 2027-07-23 |
| Construcción funcional y pruebas unitarias: Movimientos de salida y regreso identificados — lote 2/4 | 2027-07-23 | 2027-07-27 |
| Construcción funcional y pruebas unitarias: Movimientos de salida y regreso identificados — lote 3/4 | 2027-07-21 | 2027-07-23 |
| Construcción funcional y pruebas unitarias: Movimientos de salida y regreso identificados — lote 4/4 | 2027-07-23 | 2027-07-27 |
| Verificación del núcleo, regresión y evidencia: Movimientos de salida y regreso identificados — lote 1/2 | 2027-07-30 | 2027-08-02 |
| Verificación del núcleo, regresión y evidencia: Movimientos de salida y regreso identificados — lote 2/2 | 2027-07-30 | 2027-08-02 |
| Coordinación y documentación del núcleo: Movimientos de salida y regreso identificados — lote 1/2 | 2027-08-02 | 2027-08-04 |
| Coordinación y documentación del núcleo: Movimientos de salida y regreso identificados — lote 2/2 | 2027-08-04 | 2027-08-06 |
| Análisis de reglas, excepciones y protocolo: Planes voluntarios y discrepancias operacionales — lote 1/1 | 2027-01-28 | 2027-02-02 |
| Diseño de datos y restricciones del núcleo: Planes voluntarios y discrepancias operacionales — lote 1/1 | 2027-01-29 | 2027-02-02 |
| Diseño de contratos internos y composición: Planes voluntarios y discrepancias operacionales — lote 1/1 | 2027-02-01 | 2027-02-03 |
| Construcción funcional y pruebas unitarias: Planes voluntarios y discrepancias operacionales — lote 1/1 | 2027-07-21 | 2027-07-23 |
| Verificación del núcleo, regresión y evidencia: Planes voluntarios y discrepancias operacionales — lote 1/1 | 2027-07-28 | 2027-07-30 |
| Coordinación y documentación del núcleo: Planes voluntarios y discrepancias operacionales — lote 1/1 | 2027-07-30 | 2027-08-03 |
| Análisis de reglas, excepciones y protocolo: Atención y escalamiento de planes vencidos — lote 1/1 | 2027-01-28 | 2027-02-02 |
| Diseño de datos y restricciones del núcleo: Atención y escalamiento de planes vencidos — lote 1/1 | 2027-01-29 | 2027-02-02 |
| Diseño de contratos internos y composición: Atención y escalamiento de planes vencidos — lote 1/1 | 2027-02-03 | 2027-02-05 |
| Construcción funcional y pruebas unitarias: Atención y escalamiento de planes vencidos — lote 1/1 | 2027-07-23 | 2027-07-28 |
| Verificación del núcleo, regresión y evidencia: Atención y escalamiento de planes vencidos — lote 1/1 | 2027-08-03 | 2027-08-05 |
| Coordinación y documentación del núcleo: Atención y escalamiento de planes vencidos — lote 1/1 | 2027-08-05 | 2027-08-09 |
| Análisis de reglas, excepciones y protocolo: Autorización operacional de amarra y compatibilidad — lote 1/1 | 2027-01-27 | 2027-01-29 |
| Diseño de datos y restricciones del núcleo: Autorización operacional de amarra y compatibilidad — lote 1/1 | 2027-01-29 | 2027-02-02 |
| Diseño de contratos internos y composición: Autorización operacional de amarra y compatibilidad — lote 1/1 | 2027-02-05 | 2027-02-08 |
| Construcción funcional y pruebas unitarias: Autorización operacional de amarra y compatibilidad — lote 1/1 | 2027-07-21 | 2027-07-23 |
| Verificación del núcleo, regresión y evidencia: Autorización operacional de amarra y compatibilidad — lote 1/1 | 2027-08-03 | 2027-08-05 |

| Task | Start | Finish |
| --- | --- | --- |
| Coordinación y documentación del núcleo: Autorización operacional de amarra y compatibilidad — lote 1/1 | 2027-08-06 | 2027-08-10 |
| Análisis de reglas, excepciones y protocolo: Clases, nóminas y participación por intervalo — lote 1/1 | 2027-01-29 | 2027-02-02 |
| Diseño de datos y restricciones del núcleo: Clases, nóminas y participación por intervalo — lote 1/1 | 2027-02-02 | 2027-02-04 |
| Diseño de contratos internos y composición: Clases, nóminas y participación por intervalo — lote 1/2 | 2027-02-01 | 2027-02-03 |
| Diseño de contratos internos y composición: Clases, nóminas y participación por intervalo — lote 2/2 | 2027-02-03 | 2027-02-05 |
| Construcción funcional y pruebas unitarias: Clases, nóminas y participación por intervalo — lote 1/4 | 2027-07-23 | 2027-07-27 |
| Construcción funcional y pruebas unitarias: Clases, nóminas y participación por intervalo — lote 2/4 | 2027-07-21 | 2027-07-23 |
| Construcción funcional y pruebas unitarias: Clases, nóminas y participación por intervalo — lote 3/4 | 2027-07-23 | 2027-07-27 |
| Construcción funcional y pruebas unitarias: Clases, nóminas y participación por intervalo — lote 4/4 | 2027-07-27 | 2027-07-29 |
| Verificación del núcleo, regresión y evidencia: Clases, nóminas y participación por intervalo — lote 1/2 | 2027-08-05 | 2027-08-09 |
| Verificación del núcleo, regresión y evidencia: Clases, nóminas y participación por intervalo — lote 2/2 | 2027-08-05 | 2027-08-09 |
| Coordinación y documentación del núcleo: Clases, nóminas y participación por intervalo — lote 1/2 | 2027-08-09 | 2027-08-11 |
| Coordinación y documentación del núcleo: Clases, nóminas y participación por intervalo — lote 2/2 | 2027-08-09 | 2027-08-11 |
| Análisis de reglas, excepciones y protocolo: Retiros coordinados y entrega única de alumno — lote 1/1 | 2027-01-27 | 2027-01-29 |
| Diseño de datos y restricciones del núcleo: Retiros coordinados y entrega única de alumno — lote 1/1 | 2027-02-04 | 2027-02-08 |
| Diseño de contratos internos y composición: Retiros coordinados y entrega única de alumno — lote 1/1 | 2027-02-05 | 2027-02-09 |
| Construcción funcional y pruebas unitarias: Retiros coordinados y entrega única de alumno — lote 1/1 | 2027-07-22 | 2027-07-27 |
| Verificación del núcleo, regresión y evidencia: Retiros coordinados y entrega única de alumno — lote 1/1 | 2027-08-09 | 2027-08-11 |
| Coordinación y documentación del núcleo: Retiros coordinados y entrega única de alumno — lote 1/1 | 2027-08-11 | 2027-08-13 |
| Análisis de reglas, excepciones y protocolo: Retorno de participantes y vista mínima de salud — lote 1/1 | 2027-02-02 | 2027-02-03 |
| Diseño de datos y restricciones del núcleo: Retorno de participantes y vista mínima de salud — lote 1/1 | 2027-02-04 | 2027-02-08 |
| Diseño de contratos internos y composición: Retorno de participantes y vista mínima de salud — lote 1/2 | 2027-02-09 | 2027-02-10 |
| Diseño de contratos internos y composición: Retorno de participantes y vista mínima de salud — lote 2/2 | 2027-02-03 | 2027-02-05 |
| Construcción funcional y pruebas unitarias: Retorno de participantes y vista mínima de salud — lote 1/4 | 2027-07-27 | 2027-07-28 |
| Construcción funcional y pruebas unitarias: Retorno de participantes y vista mínima de salud — lote 2/4 | 2027-07-28 | 2027-07-30 |
| Construcción funcional y pruebas unitarias: Retorno de participantes y vista mínima de salud — lote 3/4 | 2027-07-26 | 2027-07-27 |
| Construcción funcional y pruebas unitarias: Retorno de participantes y vista mínima de salud — lote 4/4 | 2027-07-27 | 2027-07-29 |
| Verificación del núcleo, regresión y evidencia: Retorno de participantes y vista mínima de salud — lote 1/2 | 2027-08-09 | 2027-08-11 |
| Verificación del núcleo, regresión y evidencia: Retorno de participantes y vista mínima de salud — lote 2/2 | 2027-08-09 | 2027-08-11 |
| Coordinación y documentación del núcleo: Retorno de participantes y vista mínima de salud — lote 1/2 | 2027-08-13 | 2027-08-17 |
| Coordinación y documentación del núcleo: Retorno de participantes y vista mínima de salud — lote 2/2 | 2027-08-13 | 2027-08-17 |
| Análisis de reglas, excepciones y protocolo: Inventario y condiciones de puestos y fondeos — lote 1/1 | 2027-01-27 | 2027-01-29 |
| Diseño de datos y restricciones del núcleo: Inventario y condiciones de puestos y fondeos — lote 1/1 | 2027-01-29 | 2027-02-02 |
| Diseño de contratos internos y composición: Inventario y condiciones de puestos y fondeos — lote 1/1 | 2027-02-05 | 2027-02-09 |
| Construcción funcional y pruebas unitarias: Inventario y condiciones de puestos y fondeos — lote 1/1 | 2027-07-29 | 2027-08-02 |
| Verificación del núcleo, regresión y evidencia: Inventario y condiciones de puestos y fondeos — lote 1/1 | 2027-08-11 | 2027-08-13 |
| Coordinación y documentación del núcleo: Inventario y condiciones de puestos y fondeos — lote 1/1 | 2027-08-13 | 2027-08-17 |
| Análisis de reglas, excepciones y protocolo: Inspecciones de boyas y evidencia desconectada — lote 1/1 | 2027-02-03 | 2027-02-05 |
| Diseño de datos y restricciones del núcleo: Inspecciones de boyas y evidencia desconectada — lote 1/1 | 2027-02-08 | 2027-02-10 |
| Diseño de contratos internos y composición: Inspecciones de boyas y evidencia desconectada — lote 1/2 | 2027-02-01 | 2027-02-03 |
| Diseño de contratos internos y composición: Inspecciones de boyas y evidencia desconectada — lote 2/2 | 2027-02-03 | 2027-02-05 |
| Construcción funcional y pruebas unitarias: Inspecciones de boyas y evidencia desconectada — lote 1/4 | 2027-07-26 | 2027-07-27 |
| Construcción funcional y pruebas unitarias: Inspecciones de boyas y evidencia desconectada — lote 2/4 | 2027-07-27 | 2027-07-29 |
| Construcción funcional y pruebas unitarias: Inspecciones de boyas y evidencia desconectada — lote 3/4 | 2027-07-29 | 2027-08-02 |
| Construcción funcional y pruebas unitarias: Inspecciones de boyas y evidencia desconectada — lote 4/4 | 2027-07-26 | 2027-07-27 |
| Verificación del núcleo, regresión y evidencia: Inspecciones de boyas y evidencia desconectada — lote 1/2 | 2027-08-11 | 2027-08-13 |
| Verificación del núcleo, regresión y evidencia: Inspecciones de boyas y evidencia desconectada — lote 2/2 | 2027-08-05 | 2027-08-09 |
| Coordinación y documentación del núcleo: Inspecciones de boyas y evidencia desconectada — lote 1/2 | 2027-08-17 | 2027-08-18 |
| Coordinación y documentación del núcleo: Inspecciones de boyas y evidencia desconectada — lote 2/2 | 2027-08-17 | 2027-08-18 |
| Análisis de reglas, excepciones y protocolo: Asociaciones temporales de medidores e instalaciones — lote 1/1 | 2027-01-29 | 2027-02-02 |
| Diseño de datos y restricciones del núcleo: Asociaciones temporales de medidores e instalaciones — lote 1/1 | 2027-02-01 | 2027-02-03 |
| Diseño de contratos internos y composición: Asociaciones temporales de medidores e instalaciones — lote 1/1 | 2027-02-05 | 2027-02-08 |
| Construcción funcional y pruebas unitarias: Asociaciones temporales de medidores e instalaciones — lote 1/1 | 2027-07-27 | 2027-07-29 |
| Verificación del núcleo, regresión y evidencia: Asociaciones temporales de medidores e instalaciones — lote 1/1 | 2027-08-03 | 2027-08-05 |
| Coordinación y documentación del núcleo: Asociaciones temporales de medidores e instalaciones — lote 1/1 | 2027-08-05 | 2027-08-09 |
| Análisis de reglas, excepciones y protocolo: Maestros de faena y habilitaciones de consulta inicial — lote 1/1 | 2027-01-29 | 2027-02-02 |
| Diseño de datos y restricciones del núcleo: Maestros de faena y habilitaciones de consulta inicial — lote 1/1 | 2027-02-01 | 2027-02-03 |
| Diseño de contratos internos y composición: Maestros de faena y habilitaciones de consulta inicial — lote 1/1 | 2027-02-08 | 2027-02-10 |
| Construcción funcional y pruebas unitarias: Maestros de faena y habilitaciones de consulta inicial — lote 1/1 | 2027-07-29 | 2027-08-02 |
| Verificación del núcleo, regresión y evidencia: Maestros de faena y habilitaciones de consulta inicial — lote 1/1 | 2027-08-09 | 2027-08-12 |
| Coordinación y documentación del núcleo: Maestros de faena y habilitaciones de consulta inicial — lote 1/1 | 2027-08-12 | 2027-08-13 |
| Análisis de reglas, excepciones y protocolo: Despacho identificado y captura segura de combustible — lote 1/1 | 2027-01-29 | 2027-02-02 |
| Diseño de datos y restricciones del núcleo: Despacho identificado y captura segura de combustible — lote 1/1 | 2027-02-03 | 2027-02-05 |
| Diseño de contratos internos y composición: Despacho identificado y captura segura de combustible — lote 1/1 | 2027-01-27 | 2027-01-28 |
| Construcción funcional y pruebas unitarias: Despacho identificado y captura segura de combustible — lote 1/1 | 2027-07-21 | 2027-07-23 |
| Verificación del núcleo, regresión y evidencia: Despacho identificado y captura segura de combustible — lote 1/1 | 2027-08-02 | 2027-08-04 |
| Coordinación y documentación del núcleo: Despacho identificado y captura segura de combustible — lote 1/1 | 2027-08-04 | 2027-08-06 |
| Análisis de reglas, excepciones y protocolo: Conciliación de tramos y rectificación de despachos — lote 1/1 | 2027-01-27 | 2027-01-29 |
| Diseño de datos y restricciones del núcleo: Conciliación de tramos y rectificación de despachos — lote 1/1 | 2027-02-03 | 2027-02-05 |
| Diseño de contratos internos y composición: Conciliación de tramos y rectificación de despachos — lote 1/1 | 2027-01-27 | 2027-01-28 |

| Task | Start | Finish |
| --- | --- | --- |
| Construcción funcional y pruebas unitarias: Conciliación de tramos y rectificación de despachos — lote 1/1 | 2027-07-23 | 2027-07-28 |
| Verificación del núcleo, regresión y evidencia: Conciliación de tramos y rectificación de despachos — lote 1/1 | 2027-08-04 | 2027-08-06 |
| Coordinación y documentación del núcleo: Conciliación de tramos y rectificación de despachos — lote 1/1 | 2027-08-09 | 2027-08-11 |
| Análisis de reglas, excepciones y protocolo: Intervalos y series conciliadas de agua y energía — lote 1/1 | 2027-01-29 | 2027-02-02 |
| Diseño de datos y restricciones del núcleo: Intervalos y series conciliadas de agua y energía — lote 1/1 | 2027-01-29 | 2027-02-02 |
| Diseño de contratos internos y composición: Intervalos y series conciliadas de agua y energía — lote 1/1 | 2027-01-29 | 2027-02-02 |
| Construcción funcional y pruebas unitarias: Intervalos y series conciliadas de agua y energía — lote 1/1 | 2027-07-28 | 2027-07-30 |
| Verificación del núcleo, regresión y evidencia: Intervalos y series conciliadas de agua y energía — lote 1/1 | 2027-08-06 | 2027-08-10 |
| Coordinación y documentación del núcleo: Intervalos y series conciliadas de agua y energía — lote 1/1 | 2027-08-13 | 2027-08-17 |
| Análisis de reglas, excepciones y protocolo: Consultas de consumo y evidencia ambiental inicial — lote 1/1 | 2027-01-29 | 2027-02-02 |
| Diseño de datos y restricciones del núcleo: Consultas de consumo y evidencia ambiental inicial — lote 1/1 | 2027-01-27 | 2027-01-29 |
| Diseño de contratos internos y composición: Consultas de consumo y evidencia ambiental inicial — lote 1/1 | 2027-01-27 | 2027-01-28 |
| Construcción funcional y pruebas unitarias: Consultas de consumo y evidencia ambiental inicial — lote 1/1 | 2027-07-21 | 2027-07-23 |
| Verificación del núcleo, regresión y evidencia: Consultas de consumo y evidencia ambiental inicial — lote 1/1 | 2027-08-02 | 2027-08-04 |
| Coordinación y documentación del núcleo: Consultas de consumo y evidencia ambiental inicial — lote 1/1 | 2027-08-04 | 2027-08-06 |
| Análisis de reglas, excepciones y protocolo: Maestros de personas, organizaciones y embarcaciones — lote 1/1 | 2027-01-27 | 2027-01-29 |
| Diseño de datos y restricciones del núcleo: Maestros de personas, organizaciones y embarcaciones — lote 1/1 | 2027-01-27 | 2027-01-29 |
| Diseño de contratos internos y composición: Maestros de personas, organizaciones y embarcaciones — lote 1/1 | 2027-02-02 | 2027-02-03 |
| Construcción funcional y pruebas unitarias: Maestros de personas, organizaciones y embarcaciones — lote 1/1 | 2027-07-23 | 2027-07-28 |
| Verificación del núcleo, regresión y evidencia: Maestros de personas, organizaciones y embarcaciones — lote 1/1 | 2027-08-10 | 2027-08-12 |
| Coordinación y documentación del núcleo: Maestros de personas, organizaciones y embarcaciones — lote 1/1 | 2027-08-12 | 2027-08-16 |
| Análisis de reglas, excepciones y protocolo: Contratos y documentos vigentes de consulta E1 — lote 1/1 | 2027-01-27 | 2027-01-29 |
| Diseño de datos y restricciones del núcleo: Contratos y documentos vigentes de consulta E1 — lote 1/1 | 2027-02-02 | 2027-02-04 |
| Diseño de contratos internos y composición: Contratos y documentos vigentes de consulta E1 — lote 1/1 | 2027-02-03 | 2027-02-05 |
| Construcción funcional y pruebas unitarias: Contratos y documentos vigentes de consulta E1 — lote 1/1 | 2027-07-28 | 2027-07-30 |
| Verificación del núcleo, regresión y evidencia: Contratos y documentos vigentes de consulta E1 — lote 1/1 | 2027-08-03 | 2027-08-05 |
| Coordinación y documentación del núcleo: Contratos y documentos vigentes de consulta E1 — lote 1/1 | 2027-08-06 | 2027-08-10 |
| Análisis de reglas, excepciones y protocolo: Atención a visitas y asignación transitoria inicial — lote 1/1 | 2027-01-27 | 2027-01-29 |
| Diseño de datos y restricciones del núcleo: Atención a visitas y asignación transitoria inicial — lote 1/1 | 2027-02-04 | 2027-02-08 |
| Diseño de contratos internos y composición: Atención a visitas y asignación transitoria inicial — lote 1/1 | 2027-02-05 | 2027-02-08 |
| Construcción funcional y pruebas unitarias: Atención a visitas y asignación transitoria inicial — lote 1/1 | 2027-07-21 | 2027-07-23 |
| Verificación del núcleo, regresión y evidencia: Atención a visitas y asignación transitoria inicial — lote 1/1 | 2027-07-28 | 2027-07-30 |
| Coordinación y documentación del núcleo: Atención a visitas y asignación transitoria inicial — lote 1/1 | 2027-08-02 | 2027-08-04 |
| Análisis de reglas, excepciones y protocolo: Agenda de varadero y posiciones compatibles — lote 1/1 | 2027-12-03 | 2027-12-07 |
| Diseño de datos y restricciones del núcleo: Agenda de varadero y posiciones compatibles — lote 1/1 | 2027-12-03 | 2027-12-07 |
| Diseño de contratos internos y composición: Agenda de varadero y posiciones compatibles — lote 1/1 | 2027-12-03 | 2027-12-06 |
| Construcción funcional y pruebas unitarias: Agenda de varadero y posiciones compatibles — lote 1/1 | 2028-01-20 | 2028-01-24 |
| Verificación del núcleo, regresión y evidencia: Agenda de varadero y posiciones compatibles — lote 1/1 | 2028-02-08 | 2028-02-10 |
| Coordinación y documentación del núcleo: Agenda de varadero y posiciones compatibles — lote 1/1 | 2028-02-10 | 2028-02-11 |
| Análisis de reglas, excepciones y protocolo: Plan de izaje, validación y suspensión de faena — lote 1/1 | 2027-12-20 | 2027-12-22 |
| Diseño de datos y restricciones del núcleo: Plan de izaje, validación y suspensión de faena — lote 1/1 | 2027-12-20 | 2027-12-22 |
| Diseño de contratos internos y composición: Plan de izaje, validación y suspensión de faena — lote 1/1 | 2027-12-20 | 2027-12-21 |
| Construcción funcional y pruebas unitarias: Plan de izaje, validación y suspensión de faena — lote 1/1 | 2028-01-26 | 2028-01-28 |
| Verificación del núcleo, regresión y evidencia: Plan de izaje, validación y suspensión de faena — lote 1/1 | 2028-02-18 | 2028-02-22 |
| Coordinación y documentación del núcleo: Plan de izaje, validación y suspensión de faena — lote 1/1 | 2028-02-22 | 2028-02-24 |
| Análisis de reglas, excepciones y protocolo: Órdenes, ejecución y reprogramación de trabajos — lote 1/1 | 2027-12-03 | 2027-12-07 |
| Diseño de datos y restricciones del núcleo: Órdenes, ejecución y reprogramación de trabajos — lote 1/1 | 2027-12-07 | 2027-12-10 |
| Diseño de contratos internos y composición: Órdenes, ejecución y reprogramación de trabajos — lote 1/1 | 2027-12-06 | 2027-12-09 |
| Construcción funcional y pruebas unitarias: Órdenes, ejecución y reprogramación de trabajos — lote 1/1 | 2028-01-24 | 2028-01-26 |
| Verificación del núcleo, regresión y evidencia: Órdenes, ejecución y reprogramación de trabajos — lote 1/1 | 2028-02-03 | 2028-02-07 |
| Coordinación y documentación del núcleo: Órdenes, ejecución y reprogramación de trabajos — lote 1/1 | 2028-02-07 | 2028-02-09 |
| Análisis de reglas, excepciones y protocolo: Acreditación, inducción y acceso a intervención — lote 1/1 | 2027-12-20 | 2027-12-22 |
| Diseño de datos y restricciones del núcleo: Acreditación, inducción y acceso a intervención — lote 1/1 | 2027-12-20 | 2027-12-22 |
| Diseño de contratos internos y composición: Acreditación, inducción y acceso a intervención — lote 1/1 | 2027-12-20 | 2027-12-21 |
| Construcción funcional y pruebas unitarias: Acreditación, inducción y acceso a intervención — lote 1/1 | 2028-01-25 | 2028-01-27 |
| Verificación del núcleo, regresión y evidencia: Acreditación, inducción y acceso a intervención — lote 1/1 | 2028-02-18 | 2028-02-22 |
| Coordinación y documentación del núcleo: Acreditación, inducción y acceso a intervención — lote 1/1 | 2028-02-22 | 2028-02-24 |
| Análisis de reglas, excepciones y protocolo: Recepción de residuos y discrepancias de origen — lote 1/1 | 2027-12-03 | 2027-12-07 |
| Diseño de datos y restricciones del núcleo: Recepción de residuos y discrepancias de origen — lote 1/1 | 2027-12-03 | 2027-12-07 |
| Diseño de contratos internos y composición: Recepción de residuos y discrepancias de origen — lote 1/1 | 2027-12-09 | 2027-12-13 |
| Construcción funcional y pruebas unitarias: Recepción de residuos y discrepancias de origen — lote 1/1 | 2028-01-24 | 2028-01-26 |
| Verificación del núcleo, regresión y evidencia: Recepción de residuos y discrepancias de origen — lote 1/1 | 2028-02-07 | 2028-02-09 |
| Coordinación y documentación del núcleo: Recepción de residuos y discrepancias de origen — lote 1/1 | 2028-02-11 | 2028-02-15 |
| Análisis de reglas, excepciones y protocolo: Entregas RESPEL parciales y certificados vinculados — lote 1/1 | 2027-12-20 | 2027-12-21 |
| Diseño de datos y restricciones del núcleo: Entregas RESPEL parciales y certificados vinculados — lote 1/1 | 2027-12-20 | 2027-12-22 |
| Diseño de contratos internos y composición: Entregas RESPEL parciales y certificados vinculados — lote 1/2 | 2027-12-21 | 2027-12-23 |
| Diseño de contratos internos y composición: Entregas RESPEL parciales y certificados vinculados — lote 2/2 | 2027-12-21 | 2027-12-24 |
| Construcción funcional y pruebas unitarias: Entregas RESPEL parciales y certificados vinculados — lote 1/4 | 2028-01-20 | 2028-01-24 |
| Construcción funcional y pruebas unitarias: Entregas RESPEL parciales y certificados vinculados — lote 2/4 | 2028-01-24 | 2028-01-26 |
| Construcción funcional y pruebas unitarias: Entregas RESPEL parciales y certificados vinculados — lote 3/4 | 2028-01-26 | 2028-01-28 |

| Task | Start | Finish |
| --- | --- | --- |
| Construcción funcional y pruebas unitarias: Entregas RESPEL parciales y certificados vinculados — lote 4/4 | 2028-01-20 | 2028-01-24 |
| Verificación del núcleo, regresión y evidencia: Entregas RESPEL parciales y certificados vinculados — lote 1/2 | 2028-02-18 | 2028-02-22 |
| Verificación del núcleo, regresión y evidencia: Entregas RESPEL parciales y certificados vinculados — lote 2/2 | 2028-02-22 | 2028-02-24 |
| Coordinación y documentación del núcleo: Entregas RESPEL parciales y certificados vinculados — lote 1/2 | 2028-02-24 | 2028-02-28 |
| Coordinación y documentación del núcleo: Entregas RESPEL parciales y certificados vinculados — lote 2/2 | 2028-02-24 | 2028-02-28 |
| Análisis de reglas, excepciones y protocolo: Indicadores ambientales e imputación comercial de consumo — lote 1/1 | 2027-12-03 | 2027-12-07 |
| Diseño de datos y restricciones del núcleo: Indicadores ambientales e imputación comercial de consumo — lote 1/1 | 2027-12-07 | 2027-12-10 |
| Diseño de contratos internos y composición: Indicadores ambientales e imputación comercial de consumo — lote 1/1 | 2027-12-13 | 2027-12-14 |
| Construcción funcional y pruebas unitarias: Indicadores ambientales e imputación comercial de consumo — lote 1/1 | 2028-01-20 | 2028-01-24 |
| Verificación del núcleo, regresión y evidencia: Indicadores ambientales e imputación comercial de consumo — lote 1/1 | 2028-02-09 | 2028-02-14 |
| Coordinación y documentación del núcleo: Indicadores ambientales e imputación comercial de consumo — lote 1/1 | 2028-02-15 | 2028-02-17 |
| Análisis de reglas, excepciones y protocolo: Espera y gestión contractual completa — lote 1/1 | 2027-12-21 | 2027-12-23 |
| Diseño de datos y restricciones del núcleo: Espera y gestión contractual completa — lote 1/1 | 2027-12-22 | 2027-12-24 |
| Diseño de contratos internos y composición: Espera y gestión contractual completa — lote 1/2 | 2027-12-23 | 2027-12-24 |
| Diseño de contratos internos y composición: Espera y gestión contractual completa — lote 2/2 | 2027-12-24 | 2027-12-28 |
| Construcción funcional y pruebas unitarias: Espera y gestión contractual completa — lote 1/4 | 2028-01-24 | 2028-01-26 |
| Construcción funcional y pruebas unitarias: Espera y gestión contractual completa — lote 2/4 | 2028-01-26 | 2028-01-28 |
| Construcción funcional y pruebas unitarias: Espera y gestión contractual completa — lote 3/4 | 2028-01-20 | 2028-01-24 |
| Construcción funcional y pruebas unitarias: Espera y gestión contractual completa — lote 4/4 | 2028-01-24 | 2028-01-26 |
| Verificación del núcleo, regresión y evidencia: Espera y gestión contractual completa — lote 1/2 | 2028-02-22 | 2028-02-24 |
| Verificación del núcleo, regresión y evidencia: Espera y gestión contractual completa — lote 2/2 | 2028-02-24 | 2028-02-28 |
| Coordinación y documentación del núcleo: Espera y gestión contractual completa — lote 1/2 | 2028-02-28 | 2028-03-01 |
| Coordinación y documentación del núcleo: Espera y gestión contractual completa — lote 2/2 | 2028-02-29 | 2028-03-02 |
| Análisis de reglas, excepciones y protocolo: Hechos facturables, tarifas y lotes de envío — lote 1/1 | 2027-12-03 | 2027-12-07 |
| Diseño de datos y restricciones del núcleo: Hechos facturables, tarifas y lotes de envío — lote 1/1 | 2027-12-03 | 2027-12-07 |
| Diseño de contratos internos y composición: Hechos facturables, tarifas y lotes de envío — lote 1/1 | 2027-12-03 | 2027-12-06 |
| Construcción funcional y pruebas unitarias: Hechos facturables, tarifas y lotes de envío — lote 1/1 | 2028-01-24 | 2028-01-26 |
| Verificación del núcleo, regresión y evidencia: Hechos facturables, tarifas y lotes de envío — lote 1/1 | 2028-02-03 | 2028-02-07 |
| Coordinación y documentación del núcleo: Hechos facturables, tarifas y lotes de envío — lote 1/1 | 2028-02-07 | 2028-02-09 |
| Análisis de reglas, excepciones y protocolo: Respuesta contable, pagos y saldos informados — lote 1/1 | 2027-12-20 | 2027-12-22 |
| Diseño de datos y restricciones del núcleo: Respuesta contable, pagos y saldos informados — lote 1/1 | 2027-12-22 | 2027-12-24 |
| Diseño de contratos internos y composición: Respuesta contable, pagos y saldos informados — lote 1/1 | 2027-12-24 | 2027-12-28 |
| Construcción funcional y pruebas unitarias: Respuesta contable, pagos y saldos informados — lote 1/1 | 2028-01-26 | 2028-01-28 |
| Verificación del núcleo, regresión y evidencia: Respuesta contable, pagos y saldos informados — lote 1/1 | 2028-02-24 | 2028-02-28 |
| Coordinación y documentación del núcleo: Respuesta contable, pagos y saldos informados — lote 1/1 | 2028-03-01 | 2028-03-03 |
| Análisis de reglas, excepciones y protocolo: Cobranza y medidas con decisión competente — lote 1/1 | 2027-12-03 | 2027-12-07 |
| Diseño de datos y restricciones del núcleo: Cobranza y medidas con decisión competente — lote 1/1 | 2027-12-07 | 2027-12-10 |
| Diseño de contratos internos y composición: Cobranza y medidas con decisión competente — lote 1/1 | 2027-12-06 | 2027-12-09 |
| Construcción funcional y pruebas unitarias: Cobranza y medidas con decisión competente — lote 1/1 | 2028-01-24 | 2028-01-26 |
| Verificación del núcleo, regresión y evidencia: Cobranza y medidas con decisión competente — lote 1/1 | 2028-02-08 | 2028-02-10 |
| Coordinación y documentación del núcleo: Cobranza y medidas con decisión competente — lote 1/1 | 2028-02-15 | 2028-02-17 |
| Análisis de reglas, excepciones y protocolo: Expedientes de custodia y exportación íntegra — lote 1/1 | 2027-12-20 | 2027-12-22 |
| Diseño de datos y restricciones del núcleo: Expedientes de custodia y exportación íntegra — lote 1/1 | 2027-12-22 | 2027-12-24 |
| Diseño de contratos internos y composición: Expedientes de custodia y exportación íntegra — lote 1/1 | 2027-12-20 | 2027-12-21 |
| Construcción funcional y pruebas unitarias: Expedientes de custodia y exportación íntegra — lote 1/1 | 2028-01-28 | 2028-02-01 |
| Verificación del núcleo, regresión y evidencia: Expedientes de custodia y exportación íntegra — lote 1/1 | 2028-02-24 | 2028-02-28 |
| Coordinación y documentación del núcleo: Expedientes de custodia y exportación íntegra — lote 1/1 | 2028-03-02 | 2028-03-06 |
| Referentes y protocolo técnico transferidos | 2028-08-01 | 2028-08-31 |
| Casos de recuperación y conciliación acompañados | 2028-09-01 | 2028-09-29 |
| Cambios e indicadores acompañados | 2028-10-02 | 2028-10-31 |
| Procedimientos estacionales transferidos | 2028-11-02 | 2028-11-30 |
| Casos y suplencia acompañados en congelamiento | 2028-12-01 | 2028-12-29 |
| Transferencia técnica y continuidad del conocimiento recibidas | 2029-01-02 | 2029-01-31 |

## Version 2 (saved 2026-10-09)

Note of the change: docs: update AGENTS.md guidelines and add SYNAPTIX subdocument files

Last finish stays 2031-07-24.

Changed:

| Task | Start | Finish |
| --- | --- | --- |
| Aceptación de usuario y expediente T-17 E1 | 2027-10-04 → 2027-10-12 (+8d) | 2027-10-07 → 2027-10-15 (+8d) |
